# ABP Planificacion

Schedule from MS Project, 2018-09-10 to 2019-05-06, costs in €, A marks actual dates.

## Calendars

- Estándar: Mon-Fri 09:00-13:00, 15:00-19:00; Sat-Sun off.

## Resources

| Resource | Rate | Cost per use |
| --- | --- | --- |
| Débora Galdeano González | 22 | 22 |
| Marines Ánton Castelló | 18 | 18 |
| María Sánchez Marqués | 20 | 20 |
| Jose Ramon Barea Cecilia | 20 | 20 |
| David Ramón Sevilla | 18 | 18 |
| Jose Vicente Anton Coy | 18 | 18 |

## Schedule

| ID | WBS | Task | Type | Duration | Start | Finish | Predecessors | Complete | Remaining | Baseline start | Baseline finish | Baseline duration | Total slack | Free slack | Constraint | Resources | Work | Actual work | Cost | Baseline cost | Actual cost | Horas Reales |
| --- | --- | --- | --- | --- | --- | --- | --- | --- | --- | --- | --- | --- | --- | --- | --- | --- | --- | --- | --- | --- | --- | --- |
| 1 | 1 | **Hito 0** |  | 22.2d | 2018-09-10 09:00 A | 2018-10-10 10:36 A |  | 100% |  | 2018-09-10 09:00 | 2018-10-10 10:36 | 22.2d |  |  |  |  |  |  |  |  |  |  |
| 2 | 1.1 | **Iteracion 1** |  | 16.2d | 2018-09-10 09:00 A | 2018-10-02 10:36 A |  | 100% |  | 2018-09-10 09:00 | 2018-10-02 10:36 | 16.2d |  |  |  |  |  |  |  |  |  |  |
| 3 | 1.1.1 | [PM]Rellenar documento de Concepto del proyecto |  | 9.6h | 2018-09-10 09:00 A | 2018-09-11 10:36 A |  | 100% |  | 2018-09-10 09:00 | 2018-09-11 10:36 | 9.6h |  |  | start no earlier than 2018-09-10 09:00 |  |  |  |  |  |  |  |
| 4 | 1.1.2 | [PM]Rellenar Version inicial del documento Especificacion |  | 9.6h | 2018-10-01 09:00 A | 2018-10-02 10:36 A |  | 100% |  | 2018-10-01 09:00 | 2018-10-02 10:36 | 9.6h |  |  |  |  |  |  |  |  |  |  |
| 5 | 1.2 | **Iteracion 2** |  | 7.2d | 2018-10-01 09:00 A | 2018-10-10 10:36 A |  | 100% |  | 2018-10-01 09:00 | 2018-10-10 10:36 | 7.2d |  |  |  |  |  |  |  |  |  |  |
| 6 | 1.2.1 | [PM]Completar y Revisar documento Especificacion |  | 9.6h | 2018-10-01 09:00 A | 2018-10-02 10:36 A |  | 100% |  | 2018-10-01 09:00 | 2018-10-02 10:36 | 9.6h |  |  |  |  |  |  |  |  |  |  |
| 7 | 1.2.2 | [PM]Crear WBS del proyecto project |  | 28.8h | 2018-10-01 09:00 A | 2018-10-04 15:48 A |  | 100% |  | 2018-10-01 09:00 | 2018-10-04 15:48 | 28.8h |  |  |  |  |  |  |  |  |  |  |
| 8 | 1.2.3 | [PM]Crear plan general (tareas y precedencias basicas) en project |  | 28.8h | 2018-10-01 09:00 A | 2018-10-04 15:48 A |  | 100% |  | 2018-10-01 09:00 | 2018-10-04 15:48 | 28.8h |  |  |  |  |  |  |  |  |  |  |
| 9 | 1.2.4 | [PM]Elaborar el Presupuesto(hoja de calculo) |  | 57.6h | 2018-10-01 09:00 A | 2018-10-10 10:36 A |  | 100% |  | 2018-10-01 09:00 | 2018-10-10 10:36 | 57.6h |  |  |  |  |  |  |  |  |  |  |
| 10 | 2 | Documento de Especificaciones realizado | milestone | 0d | 2018-10-10 10:36 A | 2018-10-10 10:36 A | 1 | 100% |  | 2018-10-10 10:36 | 2018-10-10 10:36 | 0d |  |  | start no earlier than 2018-10-10 09:00 |  |  |  |  |  |  |  |
| 11 | 3 | **Hito 1** |  | 55.5d | 2018-10-01 09:00 A | 2018-12-17 13:00 |  | 20% | 44.45d | 2018-10-01 09:00 | 2018-12-17 13:00 | 55.5d | 100.5d | 4.5d |  |  | 245.76h | 113.7h | 5,371.17 | 6,460.04 | 2,499.39 |  |
| 12 | 3.1 | **Iteracion 3** |  | 10d | 2018-10-11 09:00 A | 2018-10-24 19:00 |  | 55% | 4.48d | 2018-10-11 09:00 | 2018-10-24 19:00 | 10d | 0d |  | start no earlier than 2018-10-11 09:00 |  | 100.51h | 54.67h | 2,063.68 | 2,063.68 | 1,189.96 |  |
| 13 | 3.1.1 | [V1]Documento de diseño de mecánicas de los NPCs |  | 15h | 2018-10-11 09:00 A | 2018-10-12 18:00 A |  | 100% |  | 2018-10-11 09:00 | 2018-10-12 18:00 | 15h |  |  | must finish on 2018-10-24 19:00 | David Ramón Sevilla [20%]; Débora Galdeano González [12%]; Jose Vicente Anton Coy [20%]; Marines Ánton Castelló [20%] | 10.8h | 10.8h | 215.04 | 215.04 | 215.04 | 14 horas |
| 14 | 3.1.2 | [v1] Documento de diseño de toma de decision: espacio y metodos |  | 32h | 2018-10-19 09:00 | 2018-10-24 19:00 | 13 |  |  | 2018-10-19 09:00 | 2018-10-24 19:00 | 32h | 0d |  | must finish on 2018-10-24 19:00 | David Ramón Sevilla [15%]; Jose Vicente Anton Coy [20%]; Marines Ánton Castelló [20%]; Débora Galdeano González [5%] | 19.2h |  | 363 | 363 |  |  |
| 15 | 3.1.3 | [V1]Documento de diseño técnico del motor de IA |  | 37h | 2018-10-18 12:00 | 2018-10-24 19:00 | 14 |  |  | 2018-10-18 12:00 | 2018-10-24 19:00 | 37h | -4.62d | 0d | must finish on 2018-10-24 19:00 | David Ramón Sevilla [20%]; Débora Galdeano González [12%]; Jose Vicente Anton Coy [20%]; Marines Ánton Castelló [20%] | 26.64h |  | 510.72 | 510.72 |  |  |
| 16 | 3.1.4 | **[V2]Diseño e implementación b.objetos (1/10)** |  | 0.44d | 2018-10-11 09:00 A | 2018-10-11 12:30 A |  | 100% |  | 2018-10-11 09:00 | 2018-10-11 12:30 | 0.44d |  |  |  | Jose Ramon Barea Cecilia [50%]; María Sánchez Marqués [50%] | 3.5h | 3.5h | 90 | 90 | 90 | 6 horas |
| 17 | 3.1.4.1 | Investigacion |  | 3.5h | 2018-10-11 09:00 A | 2018-10-11 12:30 A |  | 100% |  | 2018-10-11 09:00 | 2018-10-11 12:30 | 3.5h |  |  |  |  |  |  |  |  |  |  |
| 18 | 3.1.4.2 | Diseño |  | 3.5h | 2018-10-11 09:00 A | 2018-10-11 12:30 A |  | 100% |  | 2018-10-11 09:00 | 2018-10-11 12:30 | 3.5h |  |  |  |  |  |  |  |  |  |  |
| 19 | 3.1.5 | **[TDS]Realizar sonidos para el juego (1/7)** |  | 0.36d | 2018-10-11 09:00 A | 2018-10-11 11:51 A |  | 100% |  | 2018-10-11 09:00 | 2018-10-11 11:51 | 0.36d |  |  |  |  | 10.25h | 10.25h | 289.08 | 289.08 | 289.08 | 14 horas |
| 20 | 3.1.5.1 | Síntesis |  | 2.85h | 2018-10-11 09:00 A | 2018-10-11 11:51 A |  | 100% |  | 2018-10-11 09:00 | 2018-10-11 11:51 | 2.85h |  |  |  | David Ramón Sevilla [15%]; Jose Ramon Barea Cecilia [15%]; Débora Galdeano González [15%]; María Sánchez Marqués [15%] | 1.71h | 1.71h | 46.2 | 46.2 | 46.2 |  |
| 21 | 3.1.5.2 | Grabaciones propias |  | 2.85h | 2018-10-11 09:00 A | 2018-10-11 11:51 A |  | 100% |  | 2018-10-11 09:00 | 2018-10-11 11:51 | 2.85h |  |  |  | David Ramón Sevilla [15%]; Jose Ramon Barea Cecilia [15%]; Débora Galdeano González [15%]; María Sánchez Marqués [15%] | 1.71h | 1.71h | 46.2 | 46.2 | 46.2 |  |
| 22 | 3.1.5.3 | Sonidos externos |  | 2.85h | 2018-10-11 09:00 A | 2018-10-11 11:51 A |  | 100% |  | 2018-10-11 09:00 | 2018-10-11 11:51 | 2.85h |  |  |  | David Ramón Sevilla [15%]; Jose Ramon Barea Cecilia [15%]; Débora Galdeano González [15%]; María Sánchez Marqués [15%] | 1.71h | 1.71h | 46.2 | 46.2 | 46.2 |  |
| 23 | 3.1.5.4 | Música |  | 2.85h | 2018-10-11 09:00 A | 2018-10-11 11:51 A |  | 100% |  | 2018-10-11 09:00 | 2018-10-11 11:51 | 2.85h |  |  |  | David Ramón Sevilla [15%]; Jose Ramon Barea Cecilia [15%]; Débora Galdeano González [15%]; María Sánchez Marqués [15%] | 1.71h | 1.71h | 46.2 | 46.2 | 46.2 |  |
| 24 | 3.1.5.5 | Cue Sheet |  | 1.42h | 2018-10-11 09:00 A | 2018-10-11 10:25 A |  | 100% |  | 2018-10-11 09:00 | 2018-10-11 10:25 | 1.42h |  |  |  | David Ramón Sevilla [15%]; Jose Ramon Barea Cecilia [15%]; Débora Galdeano González [15%]; María Sánchez Marqués [15%] | 0.85h | 0.85h | 29.04 | 29.04 | 29.04 |  |
| 25 | 3.1.5.6 | Hoja de metadatos |  | 1.42h | 2018-10-11 09:00 A | 2018-10-11 10:25 A |  | 100% |  | 2018-10-11 09:00 | 2018-10-11 10:25 | 1.42h |  |  |  | David Ramón Sevilla [15%]; Jose Ramon Barea Cecilia [15%]; Débora Galdeano González [15%]; María Sánchez Marqués [15%] | 0.85h | 0.85h | 29.04 | 29.04 | 29.04 |  |
| 26 | 3.1.5.7 | Integración del motor de audio en el juego con prueba de concepto |  | 2.85h | 2018-10-11 09:00 A | 2018-10-11 11:51 A |  | 100% |  | 2018-10-11 09:00 | 2018-10-11 11:51 | 2.85h |  |  |  | David Ramón Sevilla [15%]; Jose Ramon Barea Cecilia [15%]; Débora Galdeano González [15%]; María Sánchez Marqués [15%] | 1.71h | 1.71h | 46.2 | 46.2 | 46.2 |  |
| 27 | 3.1.6 | [RV]Boceto de los personajes (1/2) |  | 15h | 2018-10-11 09:00 A | 2018-10-12 18:00 A |  | 100% |  | 2018-10-11 09:00 | 2018-10-12 18:00 | 15h |  |  | must finish on 2018-10-24 19:00 | Débora Galdeano González [20%] | 3h | 3h | 70.4 | 70.4 | 70.4 | 5 horas |
| 28 | 3.1.7 | [PD]Vídeo con animación del logo de la empresa (1/2) |  | 30h | 2018-10-11 09:00 A | 2018-10-16 17:00 A |  | 100% |  | 2018-10-11 09:00 | 2018-10-16 17:00 | 30h |  |  | must finish on 2018-10-24 19:00 | Jose Ramon Barea Cecilia [30%]; Jose Vicente Anton Coy [20%]; Marines Ánton Castelló [20%]; David Ramón Sevilla [20%] | 27h | 27h | 520.8 | 520.8 | 520.8 | 24 horas |
| 29 | 3.1.8 | [PM]Registrar tiempos y % de realización de tareas en Project |  | 1h | 2018-10-24 18:00 A | 2018-10-24 19:00 A |  | 100% |  | 2018-10-24 18:00 | 2018-10-24 19:00 | 1h |  |  | must finish on 2018-10-24 19:00 | David Ramón Sevilla [2%]; Débora Galdeano González [2%]; Jose Ramon Barea Cecilia [2%]; Jose Vicente Anton Coy [2%]; María Sánchez Marqués [2%]; Marines Ánton Castelló [2%] | 0.12h | 0.12h | 4.64 | 4.64 | 4.64 | 48 minutos |

Notes:
- 13: Falta bocetos o esquemas
- 14: Se mueven a iteraccion 4 por falta de tiempo
- 15: Se mueven a iteraccion 4 por falta de tiempo
- 27: Faltarian los enemigos
- 29: Se han realizado en excel por comodidad, las proximas en toggl

| ID | WBS | Task | Type | Duration | Start | Finish | Predecessors | Complete | Remaining | Baseline start | Baseline finish | Baseline duration | Total slack | Constraint | Deadline | Resources | Work | Actual work | Cost | Baseline cost | Actual cost | Horas Reales | Encargados | Horas realizadas |
| --- | --- | --- | --- | --- | --- | --- | --- | --- | --- | --- | --- | --- | --- | --- | --- | --- | --- | --- | --- | --- | --- | --- | --- | --- |
| 30 | 3.2 | **Iteracion 4** |  | 9.1d | 2018-10-25 09:00 A | 2018-11-07 09:48 |  | 99% | 0.06d | 2018-10-25 09:00 | 2018-11-07 11:00 | 9.25d | 0.9d | start no earlier than 2018-10-25 09:00 |  |  | 59.92h | 59.02h | 1,344.23 | 2,541.81 | 1,309.43 |  |  |  |
| 31 | 3.2.1 | [v1] Documento de diseño de toma de decision: espacio y metodos (1/2) |  | 4h | 2018-10-25 09:00 A | 2018-10-25 13:00 A | 13 | 100% |  | 2018-10-25 09:00 | 2018-10-30 19:00 | 32h |  |  | 2018-11-07 19:00 | David Ramón Sevilla [10%]; Jose Vicente Anton Coy [10%]; Marines Ánton Castelló [10%]; Débora Galdeano González [10%] | 1.6h | 1.6h | 38 | 250.8 | 38 | 32 h | Marines, Debora, David | 4 h |
| 32 | 3.2.2 | [V1]Documento de diseño técnico del motor de IA (1/2) |  | 8h | 2018-10-31 09:00 A | 2018-10-31 19:00 A | 31 | 100% |  | 2018-10-31 09:00 | 2018-11-06 16:00 | 37h |  |  | 2018-11-07 19:00 | David Ramón Sevilla [10%]; Débora Galdeano González [10%]; Jose Vicente Anton Coy [10%]; Marines Ánton Castelló [10%] | 3.2h | 3.2h | 68.4 | 288.8 | 68.4 | 37 h | Marines, Debora, David | 8 h |
| 33 | 3.2.3 | **[V1]Sistema de toma de decisión con Behaviour Trees (1/2)** |  | 1.88d | 2018-10-29 09:00 A | 2018-10-30 18:00 A | 15 | 100% |  | 2018-10-29 09:00 | 2018-11-06 12:00 | 6.38d |  |  | 2018-11-07 19:00 | David Ramón Sevilla [10%]; Débora Galdeano González [10%]; Jose Vicente Anton Coy [10%]; Marines Ánton Castelló [10%] | 6h | 6h | 121.6 | 395.2 | 121.6 | 51 h | Debora | 15 h |
| 34 | 3.2.3.1 | Investigacion |  | 10h | 2018-10-29 09:00 A | 2018-10-30 11:00 A |  | 100% |  | 2018-10-29 09:00 | 2018-10-30 11:00 | 10h |  | start no earlier than 2018-10-27 09:00 | 2018-11-07 19:00 |  |  |  |  |  |  | 10 h |  | 10 h |
| 35 | 3.2.3.2 | Diseño |  | 5h | 2018-10-30 11:00 A | 2018-10-30 18:00 A | 34 | 100% |  | 2018-10-30 11:00 | 2018-10-30 18:00 | 5h |  |  | 2018-11-07 19:00 |  |  |  |  |  |  | 5 h |  | 5 h |
| 36 | 3.2.3.3 | Implementar | milestone | 0h | 2018-10-30 18:00 A | 2018-10-30 18:00 A | 35 | 100% |  | 2018-10-30 18:00 | 2018-11-06 12:00 | 36h |  |  | 2018-11-07 19:00 |  |  |  |  |  |  | 36 h |  | 0 h |
| 37 | 3.2.4 | [V1]Documento de diseño de mecánicas de los NPCs 2/2 |  | 22h | 2018-10-25 09:00 A | 2018-10-29 17:00 A |  | 100% |  | 2018-10-25 09:00 | 2018-10-29 17:00 | 22h |  | finish no later than 2018-11-07 19:00 | 2018-11-07 19:00 | Débora Galdeano González [10%]; Marines Ánton Castelló [10%]; David Ramón Sevilla [10%]; Jose Vicente Anton Coy [10%] | 8.8h | 8.8h | 174.8 | 174.8 | 174.8 | 22 h | Marines debora david jose vicente | 5 h |
| 38 | 3.2.5 | **[V2]Diseño e implementación b.objetos (2/10)** |  | 0.88d | 2018-10-30 09:00 A | 2018-10-30 18:00 A |  | 100% |  | 2018-10-30 09:00 | 2018-10-30 18:00 | 0.88d |  | finish no later than 2018-11-07 19:00 | 2018-11-07 19:00 | María Sánchez Marqués [10%]; Jose Ramon Barea Cecilia [10%]; David Ramón Sevilla [10%]; Débora Galdeano González [10%]; Jose Vicente Anton Coy [10%]; Marines Ánton Castelló [10%] | 4.2h | 4.2h | 92.8 | 92.8 | 92.8 | 7 h | Jose vicente | 14 h |
| 39 | 3.2.5.1 | Diseño |  | 2h | 2018-10-30 09:00 A | 2018-10-30 11:00 A |  | 100% |  | 2018-10-30 09:00 | 2018-10-30 11:00 | 2h |  | start no earlier than 2018-10-30 09:00 |  |  |  |  |  |  |  |  |  |  |
| 40 | 3.2.5.2 | Implementacion |  | 5h | 2018-10-30 11:00 A | 2018-10-30 18:00 A | 39 | 100% |  | 2018-10-30 11:00 | 2018-10-30 18:00 | 5h |  |  |  |  |  |  |  |  |  |  |  |  |
| 41 | 3.2.6 | **[v2]Diseño e implementacion b.componentes 1** |  | 1.25d | 2018-10-31 09:00 A | 2018-11-01 11:00 A |  | 100% |  | 2018-10-31 09:00 | 2018-11-01 11:00 | 1.25d |  | finish no later than 2018-11-07 19:00 | 2018-11-07 19:00 | David Ramón Sevilla [10%]; Jose Ramon Barea Cecilia [10%]; Jose Vicente Anton Coy [10%]; María Sánchez Marqués [10%]; Marines Ánton Castelló [10%]; Débora Galdeano González [10%] | 6h | 6h | 127.6 | 127.6 | 127.6 | 10 h | Jose ramon, Maria | 6 h |
| 42 | 3.2.6.1 | Investigar |  | 5h | 2018-10-31 09:00 A | 2018-10-31 16:00 A |  | 100% |  | 2018-10-31 09:00 | 2018-10-31 16:00 | 5h |  | start no earlier than 2018-10-31 09:00 |  |  |  |  |  |  |  |  |  |  |
| 43 | 3.2.6.2 | Diseñar |  | 5h | 2018-10-31 16:00 A | 2018-11-01 11:00 A | 42 | 100% |  | 2018-10-31 16:00 | 2018-11-01 11:00 | 5h |  |  |  |  |  |  |  |  |  |  |  |  |
| 44 | 3.2.7 | [v2]Utilización de joints en las mecánicas jugables (1/2) |  | 4h | 2018-10-25 09:00 A | 2018-10-25 13:00 A |  | 100% |  | 2018-10-25 09:00 | 2018-10-29 10:00 | 17h |  |  | 2018-11-07 19:00 | David Ramón Sevilla [10%]; Débora Galdeano González [10%]; Jose Ramon Barea Cecilia [10%]; Jose Vicente Anton Coy [10%]; María Sánchez Marqués [10%]; Marines Ánton Castelló [10%] | 2.4h | 2.4h | 58 | 208.8 | 58 | 17 h | Jose Ramon | 4 h |
| 45 | 3.2.8 | [V2]Mecánicas básicas entidades sin IA |  | 1h | 2018-10-25 15:00 | 2018-10-25 16:00 | 44 |  |  | 2018-10-29 10:00 | 2018-11-01 18:00 | 30h | 9.38d | finish no later than 2018-11-07 19:00 | 2018-11-07 19:00 | David Ramón Sevilla [15%]; Débora Galdeano González [15%]; Jose Ramon Barea Cecilia [15%]; Jose Vicente Anton Coy [15%]; María Sánchez Marqués [15%]; Marines Ánton Castelló [15%] | 0.9h |  | 34.8 | 539.4 |  | 30 h | Maria, jose vicente | 0 h |
| 46 | 3.2.9 | [RV]Boceto de los personajes 2/3 |  | 15h | 2018-11-02 09:00 A | 2018-11-05 18:00 A |  | 100% |  | 2018-11-02 09:00 | 2018-11-05 18:00 | 15h |  | start no earlier than 2018-11-02 09:00 | 2018-11-07 19:00 | María Sánchez Marqués [5%]; Débora Galdeano González [10%]; Marines Ánton Castelló [5%] | 3h | 3h | 65.6 | 65.6 | 65.6 | 15 h | Debora, Marines | 14 h |
| 47 | 3.2.10 | [PD]Vídeo con animación del logo de la empresa (2/2) |  | 30h | 2018-10-25 09:00 A | 2018-10-30 17:00 A |  | 100% |  |  |  |  |  |  |  | David Ramón Sevilla [10%]; Jose Vicente Anton Coy [10%]; Marines Ánton Castelló [10%] | 9h | 9h | 167.4 |  | 167.4 | 30 h | David | 1 h |
| 48 | 3.2.11 | **[TDS]Realizar sonidos para el juego 2/7** |  | 0.36d | 2018-10-25 09:00 A | 2018-10-25 11:51 A |  | 100% |  | 2018-10-25 09:00 | 2018-10-25 11:51 | 0.36d |  | finish no later than 2018-11-07 19:00 | 2018-11-07 19:00 | David Ramón Sevilla [15%]; Débora Galdeano González [15%]; María Sánchez Marqués [15%]; Jose Ramon Barea Cecilia [15%] | 11.96h | 11.96h | 335.28 | 335.28 | 335.28 | 15 h | David, Jose ramon, debora, maria | 9 h |
| 49 | 3.2.11.1 | Síntesis |  | 2.85h | 2018-10-25 09:00 A | 2018-10-25 11:51 A |  | 100% |  | 2018-10-25 09:00 | 2018-10-25 11:51 | 2.85h |  |  |  | David Ramón Sevilla [15%]; Jose Ramon Barea Cecilia [15%]; Débora Galdeano González [15%]; María Sánchez Marqués [15%] | 1.71h | 1.71h | 46.2 | 46.2 | 46.2 |  |  |  |
| 50 | 3.2.11.2 | Grabaciones propias |  | 2.85h | 2018-10-25 09:00 A | 2018-10-25 11:51 A |  | 100% |  | 2018-10-25 09:00 | 2018-10-25 11:51 | 2.85h |  |  |  | David Ramón Sevilla [15%]; Jose Ramon Barea Cecilia [15%]; Débora Galdeano González [15%]; María Sánchez Marqués [15%] | 1.71h | 1.71h | 46.2 | 46.2 | 46.2 |  |  |  |
| 51 | 3.2.11.3 | Sonidos externos |  | 2.85h | 2018-10-25 09:00 A | 2018-10-25 11:51 A |  | 100% |  | 2018-10-25 09:00 | 2018-10-25 11:51 | 2.85h |  |  |  | David Ramón Sevilla [15%]; Jose Ramon Barea Cecilia [15%]; Débora Galdeano González [15%]; María Sánchez Marqués [15%] | 1.71h | 1.71h | 46.2 | 46.2 | 46.2 |  |  |  |
| 52 | 3.2.11.4 | Música |  | 2.85h | 2018-10-25 09:00 A | 2018-10-25 11:51 A |  | 100% |  | 2018-10-25 09:00 | 2018-10-25 11:51 | 2.85h |  |  |  | David Ramón Sevilla [15%]; Jose Ramon Barea Cecilia [15%]; Débora Galdeano González [15%]; María Sánchez Marqués [15%] | 1.71h | 1.71h | 46.2 | 46.2 | 46.2 |  |  |  |
| 53 | 3.2.11.5 | Cue Sheet |  | 1.42h | 2018-10-25 09:00 A | 2018-10-25 10:25 A |  | 100% |  | 2018-10-25 09:00 | 2018-10-25 10:25 | 1.42h |  |  |  | David Ramón Sevilla [15%]; Jose Ramon Barea Cecilia [15%]; Débora Galdeano González [15%]; María Sánchez Marqués [15%] | 0.85h | 0.85h | 29.04 | 29.04 | 29.04 |  |  |  |
| 54 | 3.2.11.6 | Hoja de metadatos |  | 1.42h | 2018-10-25 09:00 A | 2018-10-25 10:25 A |  | 100% |  | 2018-10-25 09:00 | 2018-10-25 10:25 | 1.42h |  |  |  | David Ramón Sevilla [15%]; Jose Ramon Barea Cecilia [15%]; Débora Galdeano González [15%]; María Sánchez Marqués [15%] | 0.85h | 0.85h | 29.04 | 29.04 | 29.04 |  |  |  |
| 55 | 3.2.11.7 | Integración del motor de audio en el juego con prueba de concepto |  | 2.85h | 2018-10-25 09:00 A | 2018-10-25 11:51 A |  | 100% |  | 2018-10-25 09:00 | 2018-10-25 11:51 | 2.85h |  |  |  | David Ramón Sevilla [15%]; Jose Ramon Barea Cecilia [15%]; Débora Galdeano González [15%]; María Sánchez Marqués [15%] | 1.71h | 1.71h | 46.2 | 46.2 | 46.2 |  |  |  |
| 56 | 3.2.12 | [PM]Registrar tiempos y % de realización de tareas en Project |  | 48min | 2018-11-07 09:00 A | 2018-11-07 09:48 A |  | 100% |  | 2018-11-07 09:00 | 2018-11-07 11:00 | 2h |  | start no earlier than 2018-11-07 09:00 | 2018-11-07 19:00 | David Ramón Sevilla [2%]; Débora Galdeano González [2%]; Jose Ramon Barea Cecilia [2%]; Jose Vicente Anton Coy [2%]; María Sánchez Marqués [2%]; Marines Ánton Castelló [2%] | 0.1h | 0.1h | 4.18 | 6.96 | 4.18 | 48 m | Todos | 48 m |
| 57 | 3.2.13 | [PM]Rellenar documento Gestión de riesgos |  | 23.04h | 2018-11-02 09:00 A | 2018-11-06 18:02 A |  | 100% |  | 2018-11-02 09:00 | 2018-11-06 18:02 | 23.04h |  | start no earlier than 2018-11-02 09:00 | 2018-11-07 19:00 | David Ramón Sevilla [2%]; Débora Galdeano González [2%]; Jose Ramon Barea Cecilia [2%]; María Sánchez Marqués [2%]; Marines Ánton Castelló [2%]; Jose Vicente Anton Coy [2%] | 2.76h | 2.76h | 55.77 | 55.77 | 55.77 | 23 h | Maria, Debora, David | 9 h |

Notes:
- 31: Se mueven a iteraccion 4 por falta de tiempo. / Se mueve a la iteracion 5 por falta de tiempo.
- 32: Se mueven a iteraccion 4 por falta de tiempo. / Se mueve a la iteracion 5 por falta de tiempo.
- 37: bocetos
- 38: De diseño tenemos menos, empezamos a implementar
- 45: Se mueve a la iteracion 5 por falta de tiempo.
- 46: Realizar enemigos

| ID | WBS | Task | Type | Duration | Start | Finish | Predecessors | Baseline start | Baseline finish | Baseline duration | Total slack | Free slack | Constraint | Resources | Work | Cost | Baseline cost | Horas Reales | Encargados |
| --- | --- | --- | --- | --- | --- | --- | --- | --- | --- | --- | --- | --- | --- | --- | --- | --- | --- | --- | --- |
| 58 | 3.3 | **Iteracion 5** |  | 10d | 2018-11-08 09:00 | 2018-11-21 19:00 |  | 2018-11-08 09:00 | 2018-11-15 17:04 | 5.76d | 0d |  | start no earlier than 2018-11-08 09:00 |  | 46.32h | 1,023.72 | 919.19 |  |  |
| 59 | 3.3.1 | [RV]Boceto de los personajes 3/3 |  | 4h | 2018-11-08 09:00 | 2018-11-08 13:00 |  |  |  |  | 127.5d |  |  | Débora Galdeano González [50%]; María Sánchez Marqués [50%] | 4h | 105 |  | 4 h | Marines,Debora |
| 60 | 3.3.2 | [v1] Documento de diseño de toma de decision: espacio y metodos (2/2) |  | 28h | 2018-11-08 09:00 | 2018-11-13 13:00 |  |  |  |  | 124.5d |  |  |  |  |  |  | 28 h | Jose vicente, David ramon |
| 61 | 3.3.3 | [V1]Documento de diseño técnico del motor de IA (2/2) |  | 29h | 2018-11-08 09:00 | 2018-11-13 16:00 |  |  |  |  | 124.38d |  |  |  |  |  |  | 29 h | Marines |
| 62 | 3.3.4 | [V1]Sistema de toma de decisión con Behaviour Trees (2/2) |  | 36h | 2018-11-08 09:00 | 2018-11-14 13:00 |  |  |  |  | 123.5d |  |  |  |  |  |  | 36 h | Debora |
| 63 | 3.3.5 | [V2]Mecánicas básicas entidades sin IA | manual | 30h | 2018-11-08 09:00 | 2018-11-13 17:00 |  |  |  |  |  |  |  |  |  |  |  | 30 h | Maria |
| 64 | 3.3.6 | [PM]Detallar plan iteraciones del mes de Noviembre. Creación Subtareas y precedencias en Project |  | 23.04h | 2018-11-08 09:00 | 2018-11-12 18:02 |  | 2018-11-08 09:00 | 2018-11-12 18:02 | 23.04h | 4.24d | 0d | finish no later than 2018-11-21 19:00 | Jose Vicente Anton Coy [20%]; David Ramón Sevilla [15%] | 8.06h | 151.45 | 151.45 | 23 h | Jose Vicente, David ramon |
| 65 | 3.3.7 | [PM]Detallar plan iteraciones del mes de Noviembre. Asignar recursos a las tareas en Project |  | 23.04h | 2018-11-12 18:02 | 2018-11-15 17:04 | 64 | 2018-11-12 18:02 | 2018-11-15 17:04 | 23.04h | 4.24d |  | finish no later than 2018-11-21 19:00 | David Ramón Sevilla [20%]; Jose Vicente Anton Coy [20%] | 9.22h | 173.09 | 173.09 | 23 h | Jose Vicente, David ramon |
| 66 | 3.3.8 | [PM]Aplicar el modelo EVA en Project |  | 21.6h | 2018-11-08 09:00 | 2018-11-12 16:36 |  | 2018-11-08 09:00 | 2018-11-12 16:36 | 21.6h | 7.3d |  | finish no later than 2018-11-21 19:00 | David Ramón Sevilla [8%]; Débora Galdeano González [8%]; Jose Ramon Barea Cecilia [8%]; Jose Vicente Anton Coy [8%]; María Sánchez Marqués [8%]; Marines Ánton Castelló [8%] | 10.37h | 209.73 | 209.73 | 21 h | Jose Vicente, David ramon |
| 67 | 3.3.9 | [RV]Bocetos de los elementos |  | 18h | 2018-11-08 09:00 | 2018-11-12 11:00 |  | 2018-11-08 09:00 | 2018-11-12 11:00 | 18h | 7.75d |  | finish no later than 2018-11-21 19:00 | Débora Galdeano González [8%]; Marines Ánton Castelló [8%]; María Sánchez Marqués [8%] | 4.32h | 91.2 | 91.2 | 18 h | Debora, marines |
| 68 | 3.3.10 | [V2]Diseño e implementación b.objetos (3/10) |  | 7h | 2018-11-08 09:00 | 2018-11-08 18:00 |  | 2018-11-08 09:00 | 2018-11-08 18:00 | 7h | 9.12d |  | finish no later than 2018-11-21 19:00 |  |  |  |  | 7 h |  |
| 69 | 3.3.11 | [v2]Diseño e implementacion b.componentes 2 |  | 10h | 2018-11-08 09:00 | 2018-11-09 11:00 |  | 2018-11-08 09:00 | 2018-11-09 11:00 | 10h | 8.75d |  | finish no later than 2018-11-21 19:00 |  |  |  |  | 10 h |  |
| 70 | 3.3.12 | [v2]Formato propio para la definicion de los niveles(documentos con la especifiacion del formato) |  | 11h | 2018-11-08 09:00 | 2018-11-09 12:00 |  | 2018-11-08 09:00 | 2018-11-09 12:00 | 11h | 5.12d | 0d | finish no later than 2018-11-21 19:00 |  |  |  |  | 11 h | Jose Vicente, Jose ramon |
| 71 | 3.3.13 | [V2]Creación de un cargador de niveles |  | 28h | 2018-11-09 12:00 | 2018-11-14 18:00 | 70 | 2018-11-09 12:00 | 2018-11-14 18:00 | 28h | 5.12d |  | finish no later than 2018-11-21 19:00 |  |  |  |  | 28 h | Jose Vicente, Jose Ramon |
| 72 | 3.3.14 | [v2]Implementacion de camara de seguimiento |  | 17h | 2018-11-08 09:00 | 2018-11-12 10:00 |  | 2018-11-08 09:00 | 2018-11-12 10:00 | 17h | 7.88d |  | finish no later than 2018-11-21 19:00 |  |  |  |  | 17 h |  |
| 73 | 3.3.15 | **[TDS]Realizar sonidos para el juego 3/7** |  | 0.36d | 2018-11-08 09:00 | 2018-11-08 11:51 |  | 2018-11-08 09:00 | 2018-11-08 11:51 | 0.36d | 9.64d |  | finish no later than 2018-11-21 19:00 |  | 10.25h | 289.08 | 289.08 | 15 h |  |
| 74 | 3.3.15.1 | Síntesis |  | 2.85h | 2018-11-08 09:00 | 2018-11-08 11:51 |  | 2018-11-08 09:00 | 2018-11-08 11:51 | 2.85h | 9.64d |  |  | David Ramón Sevilla [15%]; Jose Ramon Barea Cecilia [15%]; Débora Galdeano González [15%]; María Sánchez Marqués [15%] | 1.71h | 46.2 | 46.2 |  |  |
| 75 | 3.3.15.2 | Grabaciones propias |  | 2.85h | 2018-11-08 09:00 | 2018-11-08 11:51 |  | 2018-11-08 09:00 | 2018-11-08 11:51 | 2.85h | 9.64d |  |  | David Ramón Sevilla [15%]; Jose Ramon Barea Cecilia [15%]; Débora Galdeano González [15%]; María Sánchez Marqués [15%] | 1.71h | 46.2 | 46.2 |  |  |
| 76 | 3.3.15.3 | Sonidos externos |  | 2.85h | 2018-11-08 09:00 | 2018-11-08 11:51 |  | 2018-11-08 09:00 | 2018-11-08 11:51 | 2.85h | 9.64d |  |  | David Ramón Sevilla [15%]; Jose Ramon Barea Cecilia [15%]; Débora Galdeano González [15%]; María Sánchez Marqués [15%] | 1.71h | 46.2 | 46.2 |  |  |
| 77 | 3.3.15.4 | Música |  | 2.85h | 2018-11-08 09:00 | 2018-11-08 11:51 |  | 2018-11-08 09:00 | 2018-11-08 11:51 | 2.85h | 9.64d |  |  | David Ramón Sevilla [15%]; Jose Ramon Barea Cecilia [15%]; Débora Galdeano González [15%]; María Sánchez Marqués [15%] | 1.71h | 46.2 | 46.2 |  |  |
| 78 | 3.3.15.5 | Cue Sheet |  | 1.42h | 2018-11-08 09:00 | 2018-11-08 10:25 |  | 2018-11-08 09:00 | 2018-11-08 10:25 | 1.42h | 9.82d |  |  | David Ramón Sevilla [15%]; Jose Ramon Barea Cecilia [15%]; Débora Galdeano González [15%]; María Sánchez Marqués [15%] | 0.85h | 29.04 | 29.04 |  |  |
| 79 | 3.3.15.6 | Hoja de metadatos |  | 1.42h | 2018-11-08 09:00 | 2018-11-08 10:25 |  | 2018-11-08 09:00 | 2018-11-08 10:25 | 1.42h | 9.82d |  |  | David Ramón Sevilla [15%]; Jose Ramon Barea Cecilia [15%]; Débora Galdeano González [15%]; María Sánchez Marqués [15%] | 0.85h | 29.04 | 29.04 |  |  |
| 80 | 3.3.15.7 | Integración del motor de audio en el juego con prueba de concepto |  | 2.85h | 2018-11-08 09:00 | 2018-11-08 11:51 |  | 2018-11-08 09:00 | 2018-11-08 11:51 | 2.85h | 9.64d |  |  | David Ramón Sevilla [15%]; Jose Ramon Barea Cecilia [15%]; Débora Galdeano González [15%]; María Sánchez Marqués [15%] | 1.71h | 46.2 | 46.2 |  |  |
| 81 | 3.3.16 | [PM]Registrar tiempos y % de realización de tareas en Project |  | 48min | 2018-11-21 18:12 | 2018-11-21 19:00 |  | 2018-11-08 09:00 | 2018-11-08 10:00 | 1h | 118d |  | finish no earlier than 2018-11-21 19:00 | David Ramón Sevilla [2%]; Débora Galdeano González [2%]; Jose Ramon Barea Cecilia [2%]; Jose Vicente Anton Coy [2%]; María Sánchez Marqués [2%]; Marines Ánton Castelló [2%] | 0.1h | 4.18 | 4.64 | 48 h |  |

Notes:
- 67: Se mueve a la iteraccion 5 por que faltan bocetos de personajes
- 81: Se han realizado en excel por comodidad, las proximas en toggl

| ID | WBS | Task | Duration | Start | Finish | Predecessors | Baseline start | Baseline finish | Baseline duration | Total slack | Free slack | Constraint | Resources | Work | Cost | Baseline cost | Horas Reales |
| --- | --- | --- | --- | --- | --- | --- | --- | --- | --- | --- | --- | --- | --- | --- | --- | --- | --- |
| 82 | 3.4 | **Iteracion 6** | 10.12d | 2018-11-22 09:00 | 2018-12-06 10:00 |  | 2018-11-22 09:00 | 2018-12-06 10:00 | 10.12d | 107.88d |  | start no earlier than 2018-11-22 09:00 |  | 10.35h | 293.26 | 289.08 |  |
| 83 | 3.4.1 | [v2]Control del player: movimiento y colisiones sin motor de físicas | 40h | 2018-11-22 09:00 | 2018-11-28 19:00 |  | 2018-11-08 09:00 | 2018-11-14 19:00 | 40h | 113d |  |  |  |  |  |  | 40 h |
| 84 | 3.4.2 | [V2]Utilización de propiedades físicas en las mecánicas jugables | 17h | 2018-11-22 09:00 | 2018-11-26 10:00 |  | 2018-11-08 09:00 | 2018-11-12 10:00 | 17h | 115.88d |  |  |  |  |  |  |  |
| 85 | 3.4.3 | [RV]Bocetos del entorno | 18h | 2018-11-22 09:00 | 2018-11-26 11:00 |  | 2018-11-22 09:00 | 2018-11-26 11:00 | 18h | 115.75d |  |  |  |  |  |  |  |
| 86 | 3.4.4 | **[TDS]Realizar sonidos para el juego 4/7** | 0.36d | 2018-11-22 09:00 | 2018-11-22 11:51 |  | 2018-11-22 09:00 | 2018-11-22 11:51 | 0.36d | 117.64d |  |  |  | 10.25h | 289.08 | 289.08 |  |
| 87 | 3.4.4.1 | Síntesis | 2.85h | 2018-11-22 09:00 | 2018-11-22 11:51 |  | 2018-11-22 09:00 | 2018-11-22 11:51 | 2.85h | 117.64d |  |  | David Ramón Sevilla [15%]; Jose Ramon Barea Cecilia [15%]; Débora Galdeano González [15%]; María Sánchez Marqués [15%] | 1.71h | 46.2 | 46.2 |  |
| 88 | 3.4.4.2 | Grabaciones propias | 2.85h | 2018-11-22 09:00 | 2018-11-22 11:51 |  | 2018-11-22 09:00 | 2018-11-22 11:51 | 2.85h | 117.64d |  |  | David Ramón Sevilla [15%]; Jose Ramon Barea Cecilia [15%]; Débora Galdeano González [15%]; María Sánchez Marqués [15%] | 1.71h | 46.2 | 46.2 |  |
| 89 | 3.4.4.3 | Sonidos externos | 2.85h | 2018-11-22 09:00 | 2018-11-22 11:51 |  | 2018-11-22 09:00 | 2018-11-22 11:51 | 2.85h | 117.64d |  |  | David Ramón Sevilla [15%]; Jose Ramon Barea Cecilia [15%]; Débora Galdeano González [15%]; María Sánchez Marqués [15%] | 1.71h | 46.2 | 46.2 |  |
| 90 | 3.4.4.4 | Música | 2.85h | 2018-11-22 09:00 | 2018-11-22 11:51 |  | 2018-11-22 09:00 | 2018-11-22 11:51 | 2.85h | 117.64d |  |  | David Ramón Sevilla [15%]; Jose Ramon Barea Cecilia [15%]; Débora Galdeano González [15%]; María Sánchez Marqués [15%] | 1.71h | 46.2 | 46.2 |  |
| 91 | 3.4.4.5 | Cue Sheet | 1.42h | 2018-11-22 09:00 | 2018-11-22 10:25 |  | 2018-11-22 09:00 | 2018-11-22 10:25 | 1.42h | 117.82d |  |  | David Ramón Sevilla [15%]; Jose Ramon Barea Cecilia [15%]; Débora Galdeano González [15%]; María Sánchez Marqués [15%] | 0.85h | 29.04 | 29.04 |  |
| 92 | 3.4.4.6 | Hoja de metadatos | 1.42h | 2018-11-22 09:00 | 2018-11-22 10:25 |  | 2018-11-22 09:00 | 2018-11-22 10:25 | 1.42h | 117.82d |  |  | David Ramón Sevilla [15%]; Jose Ramon Barea Cecilia [15%]; Débora Galdeano González [15%]; María Sánchez Marqués [15%] | 0.85h | 29.04 | 29.04 |  |
| 93 | 3.4.4.7 | Integración del motor de audio en el juego con prueba de concepto | 2.85h | 2018-11-22 09:00 | 2018-11-22 11:51 |  | 2018-11-22 09:00 | 2018-11-22 11:51 | 2.85h | 117.64d |  |  | David Ramón Sevilla [15%]; Jose Ramon Barea Cecilia [15%]; Débora Galdeano González [15%]; María Sánchez Marqués [15%] | 1.71h | 46.2 | 46.2 |  |
| 94 | 3.4.5 | [V1]Sistema de distribución central de tiempo de proceso (Scheduling) | 41h | 2018-11-22 09:00 | 2018-11-29 10:00 |  | 2018-11-22 09:00 | 2018-11-29 10:00 | 41h | 107.88d | 0d |  |  |  |  |  |  |
| 95 | 3.4.6 | [v1]Gestión de recursos de IA con Level-of-Detail (LoD) | 40h | 2018-11-29 10:00 | 2018-12-06 10:00 | 94 | 2018-11-29 10:00 | 2018-12-06 10:00 | 40h | 107.88d |  |  |  |  |  |  |  |
| 96 | 3.4.7 | [V2]Diseño e implementación b.objetos (4/10) | 7h | 2018-11-22 09:00 | 2018-11-22 18:00 |  | 2018-11-22 09:00 | 2018-11-22 18:00 | 7h | 117.12d |  |  |  |  |  |  |  |
| 97 | 3.4.8 | [v2]Diseño e implementacion b.componentes 3 | 10h | 2018-11-22 09:00 | 2018-11-23 11:00 |  | 2018-11-22 09:00 | 2018-11-23 11:00 | 10h | 116.75d |  |  |  |  |  |  |  |
| 98 | 3.4.9 | [V2]Uso de trazado de rayos y otros tests de las físicas | 17h | 2018-11-22 09:00 | 2018-11-26 10:00 |  | 2018-11-22 09:00 | 2018-11-26 10:00 | 17h | 115.88d |  |  |  |  |  |  |  |
| 99 | 3.4.10 | [V2]Mecánicas de acción | 30h | 2018-11-22 09:00 | 2018-11-27 17:00 |  | 2018-11-22 09:00 | 2018-11-27 17:00 | 30h | 114.25d |  |  |  |  |  |  |  |
| 100 | 3.4.11 | [PM]Registrar tiempos y % de realización de tareas en Project | 48min | 2018-12-04 18:12 | 2018-12-04 19:00 |  | 2018-11-08 09:00 | 2018-11-08 10:00 | 1h | 109d |  | finish no earlier than 2018-12-04 19:00 | David Ramón Sevilla [2%]; Débora Galdeano González [2%]; Jose Ramon Barea Cecilia [2%]; Jose Vicente Anton Coy [2%]; María Sánchez Marqués [2%]; Marines Ánton Castelló [2%] | 0.1h | 4.18 | 4.64 | 48 h |
| 101 | 3.5 | **Iteracion 7** | 7.5d | 2018-12-06 09:00 | 2018-12-17 13:00 |  | 2018-12-06 09:00 | 2018-12-17 13:00 | 7.5d | 100.5d |  | start no earlier than 2018-12-06 09:00 |  | 10.25h | 289.08 | 289.08 |  |
| 102 | 3.5.1 | [PM]Detallar plan iteraciones del mes de Diciembre. Creación Subtareas y precedencias en Project | 23.04h | 2018-12-06 09:00 | 2018-12-10 18:02 |  | 2018-12-06 09:00 | 2018-12-10 18:02 | 23.04h | 102.24d | 0d |  |  |  |  |  |  |
| 103 | 3.5.2 | [PM]Detallar plan iteraciones del mes de Diciembre. Asignar recursos a las tareas en Project | 23.04h | 2018-12-10 18:02 | 2018-12-13 17:04 | 102 | 2018-12-10 18:02 | 2018-12-13 17:04 | 23.04h | 102.24d |  |  |  |  |  |  |  |
| 104 | 3.5.3 | [PD]Cartel juego/proyecto | 60h | 2018-12-06 09:00 | 2018-12-17 13:00 |  | 2018-12-06 09:00 | 2018-12-17 13:00 | 60h | 100.5d |  |  |  |  |  |  |  |
| 105 | 3.5.4 | **[TDS]Realizar sonidos para el juego 5/7** | 0.36d | 2018-12-06 09:00 | 2018-12-06 11:51 |  | 2018-12-06 09:00 | 2018-12-06 11:51 | 0.36d | 107.64d |  |  |  | 10.25h | 289.08 | 289.08 |  |
| 106 | 3.5.4.1 | Síntesis | 2.85h | 2018-12-06 09:00 | 2018-12-06 11:51 |  | 2018-12-06 09:00 | 2018-12-06 11:51 | 2.85h | 107.64d |  |  | David Ramón Sevilla [15%]; Jose Ramon Barea Cecilia [15%]; Débora Galdeano González [15%]; María Sánchez Marqués [15%] | 1.71h | 46.2 | 46.2 |  |
| 107 | 3.5.4.2 | Grabaciones propias | 2.85h | 2018-12-06 09:00 | 2018-12-06 11:51 |  | 2018-12-06 09:00 | 2018-12-06 11:51 | 2.85h | 107.64d |  |  | David Ramón Sevilla [15%]; Jose Ramon Barea Cecilia [15%]; Débora Galdeano González [15%]; María Sánchez Marqués [15%] | 1.71h | 46.2 | 46.2 |  |
| 108 | 3.5.4.3 | Sonidos externos | 2.85h | 2018-12-06 09:00 | 2018-12-06 11:51 |  | 2018-12-06 09:00 | 2018-12-06 11:51 | 2.85h | 107.64d |  |  | David Ramón Sevilla [15%]; Jose Ramon Barea Cecilia [15%]; Débora Galdeano González [15%]; María Sánchez Marqués [15%] | 1.71h | 46.2 | 46.2 |  |
| 109 | 3.5.4.4 | Música | 2.85h | 2018-12-06 09:00 | 2018-12-06 11:51 |  | 2018-12-06 09:00 | 2018-12-06 11:51 | 2.85h | 107.64d |  |  | David Ramón Sevilla [15%]; Jose Ramon Barea Cecilia [15%]; Débora Galdeano González [15%]; María Sánchez Marqués [15%] | 1.71h | 46.2 | 46.2 |  |
| 110 | 3.5.4.5 | Cue Sheet | 1.42h | 2018-12-06 09:00 | 2018-12-06 10:25 |  | 2018-12-06 09:00 | 2018-12-06 10:25 | 1.42h | 107.82d |  |  | David Ramón Sevilla [15%]; Jose Ramon Barea Cecilia [15%]; Débora Galdeano González [15%]; María Sánchez Marqués [15%] | 0.85h | 29.04 | 29.04 |  |
| 111 | 3.5.4.6 | Hoja de metadatos | 1.42h | 2018-12-06 09:00 | 2018-12-06 10:25 |  | 2018-12-06 09:00 | 2018-12-06 10:25 | 1.42h | 107.82d |  |  | David Ramón Sevilla [15%]; Jose Ramon Barea Cecilia [15%]; Débora Galdeano González [15%]; María Sánchez Marqués [15%] | 0.85h | 29.04 | 29.04 |  |
| 112 | 3.5.4.7 | Integración del motor de audio en el juego con prueba de concepto | 2.85h | 2018-12-06 09:00 | 2018-12-06 11:51 |  | 2018-12-06 09:00 | 2018-12-06 11:51 | 2.85h | 107.64d |  |  | David Ramón Sevilla [15%]; Jose Ramon Barea Cecilia [15%]; Débora Galdeano González [15%]; María Sánchez Marqués [15%] | 1.71h | 46.2 | 46.2 |  |
| 113 | 3.5.5 | [V2]Diseño e implementación b.objetos (5/10) | 7h | 2018-12-06 09:00 | 2018-12-06 18:00 |  | 2018-12-06 09:00 | 2018-12-06 18:00 | 7h | 107.12d |  |  |  |  |  |  |  |
| 114 | 3.5.6 | [v2]Diseño e implementacion b.componentes 5 | 10h | 2018-12-06 09:00 | 2018-12-07 11:00 |  | 2018-12-06 09:00 | 2018-12-07 11:00 | 10h | 106.75d |  | start no earlier than 2018-11-26 09:00 |  |  |  |  |  |
| 115 | 3.5.7 | [v2]Mecanicas de puzzle | 32h | 2018-12-06 09:00 | 2018-12-11 19:00 |  | 2018-12-06 09:00 | 2018-12-11 19:00 | 32h | 104d |  |  |  |  |  |  |  |
| 116 | 3.5.8 | [V2]Mecánicas de rol | 30h | 2018-12-06 09:00 | 2018-12-11 17:00 |  | 2018-12-06 09:00 | 2018-12-11 17:00 | 30h | 104.25d |  |  |  |  |  |  |  |
| 117 | 3.5.9 | [v2]Uso de sistema de depuración visual de las físicas | 10h | 2018-12-06 09:00 | 2018-12-07 11:00 |  | 2018-12-06 09:00 | 2018-12-07 11:00 | 10h | 106.75d |  |  |  |  |  |  |  |
| 118 | 3.5.10 | [v2]Power-ups y elementos adicionales | 28h | 2018-12-06 09:00 | 2018-12-11 13:00 |  | 2018-12-06 09:00 | 2018-12-11 13:00 | 28h | 104.5d |  |  |  |  |  |  |  |
| 119 | 3.6 | [PM]Comparar la planificación prevista y real en Project hito 1 | 21.6h | 2018-10-01 09:00 | 2018-10-03 16:36 |  | 2018-10-01 09:00 | 2018-10-03 16:36 | 21.6h | 147d | 0d |  |  |  |  |  |  |
| 120 | 3.7 | [PM]Confeccionar Informes de iteración e informe resumen de Hito 1 | 21.6h | 2018-10-03 16:36 | 2018-10-08 12:12 | 119 | 2018-10-03 16:36 | 2018-10-08 12:12 | 21.6h | 147d | 0d |  |  |  |  |  |  |
| 121 | 3.8 | [PM]Elaborar la presentación del Hito 1 | 14.4h | 2018-10-08 12:12 | 2018-10-10 10:36 | 120 | 2018-10-08 12:12 | 2018-10-10 10:36 | 14.4h | 147d | 0d |  |  |  |  |  |  |
| 122 | 3.9 | [PM]Exponer la presentación del Hito 1 | 14.4h | 2018-10-10 10:36 | 2018-10-11 19:00 | 121 | 2018-10-10 10:36 | 2018-10-11 19:00 | 14.4h | 147d |  |  |  |  |  |  |  |

Notes:
- 100: Se han realizado en excel por comodidad, las proximas en toggl

| ID | WBS | Task | Type | Duration | Start | Finish | Predecessors | Baseline start | Baseline finish | Baseline duration | Total slack | Free slack | Constraint | Deadline | Resources | Work | Cost | Baseline cost |
| --- | --- | --- | --- | --- | --- | --- | --- | --- | --- | --- | --- | --- | --- | --- | --- | --- | --- | --- |
| 123 | 3.10 | **[V1]Sistema de percepción sensorial (vista, oído, olfato, canales…)** |  | 5.75d | 2018-11-08 09:00 | 2018-11-15 17:00 |  | 2018-11-08 09:00 | 2018-11-15 17:00 | 5.75d | 122.25d |  | start no earlier than 2018-11-08 09:00 |  | David Ramón Sevilla [10%]; Débora Galdeano González [10%]; Jose Vicente Anton Coy [10%]; Marines Ánton Castelló [10%] | 18.4h | 357.2 | 357.2 |
| 124 | 3.10.1 | Investigacion |  | 16h | 2018-11-08 09:00 | 2018-11-09 19:00 |  | 2018-11-08 09:00 | 2018-11-09 19:00 | 16h | 122.25d | 0d |  |  |  |  |  |  |
| 125 | 3.10.2 | Diseño |  | 6h | 2018-11-12 09:00 | 2018-11-12 17:00 | 124 | 2018-11-12 09:00 | 2018-11-12 17:00 | 6h | 122.25d | 0d |  |  |  |  |  |  |
| 126 | 3.10.3 | Implementar |  | 24h | 2018-11-12 17:00 | 2018-11-15 17:00 | 125 | 2018-11-12 17:00 | 2018-11-15 17:00 | 24h | 122.25d |  |  |  |  |  |  |  |
| 127 | 4 | Versión Alpha de mecánicas | milestone | 0d | 2018-12-22 09:00 | 2018-12-22 09:00 | 11 | 2018-12-22 09:00 | 2018-12-22 09:00 | 0d | 96d |  | start no earlier than 2018-12-22 09:00 |  |  |  |  |  |
| 128 | 5 | **Hito 2** |  | 15.25d? | 2018-12-24 09:00 | 2019-01-14 11:00 |  | 2018-12-24 09:00 | 2019-01-14 11:00 | 15.25d? | 9.75d | 0d |  | 2019-01-25 19:00 |  | 20.51h | 578.16 | 578.16 |
| 129 | 5.1 | **Navidad** |  | 1.25d? | 2018-12-24 09:00 | 2018-12-25 11:00 |  | 2018-12-24 09:00 | 2018-12-25 11:00 | 1.25d? | 23.75d |  | start no earlier than 2018-12-22 09:00 |  |  | 10.25h | 289.08 | 289.08 |
| 130 | 5.1.1 | [V2]Diseño e implementación b.objetos (6/10) |  | 7h | 2018-12-24 09:00 | 2018-12-24 18:00 |  | 2018-12-24 09:00 | 2018-12-24 18:00 | 7h | 24.12d |  |  |  |  |  |  |  |
| 131 | 5.1.2 | [v2]Diseño e implementacion b.componentes 6 |  | 10h | 2018-12-24 09:00 | 2018-12-25 11:00 |  | 2018-12-24 09:00 | 2018-12-25 11:00 | 10h | 23.75d |  | start no earlier than 2018-12-10 09:00 |  |  |  |  |  |
| 132 | 5.1.3 | **[TDS]Realizar sonidos para el juego 6/7** |  | 0.36d | 2018-12-24 09:00 | 2018-12-24 11:51 |  | 2018-12-24 09:00 | 2018-12-24 11:51 | 0.36d | 24.64d |  |  |  |  | 10.25h | 289.08 | 289.08 |
| 133 | 5.1.3.1 | Síntesis |  | 2.85h | 2018-12-24 09:00 | 2018-12-24 11:51 |  | 2018-12-24 09:00 | 2018-12-24 11:51 | 2.85h | 24.64d |  |  |  | David Ramón Sevilla [15%]; Jose Ramon Barea Cecilia [15%]; Débora Galdeano González [15%]; María Sánchez Marqués [15%] | 1.71h | 46.2 | 46.2 |
| 134 | 5.1.3.2 | Grabaciones propias |  | 2.85h | 2018-12-24 09:00 | 2018-12-24 11:51 |  | 2018-12-24 09:00 | 2018-12-24 11:51 | 2.85h | 24.64d |  |  |  | David Ramón Sevilla [15%]; Jose Ramon Barea Cecilia [15%]; Débora Galdeano González [15%]; María Sánchez Marqués [15%] | 1.71h | 46.2 | 46.2 |
| 135 | 5.1.3.3 | Sonidos externos |  | 2.85h | 2018-12-24 09:00 | 2018-12-24 11:51 |  | 2018-12-24 09:00 | 2018-12-24 11:51 | 2.85h | 24.64d |  |  |  | David Ramón Sevilla [15%]; Jose Ramon Barea Cecilia [15%]; Débora Galdeano González [15%]; María Sánchez Marqués [15%] | 1.71h | 46.2 | 46.2 |
| 136 | 5.1.3.4 | Música |  | 2.85h | 2018-12-24 09:00 | 2018-12-24 11:51 |  | 2018-12-24 09:00 | 2018-12-24 11:51 | 2.85h | 24.64d |  |  |  | David Ramón Sevilla [15%]; Jose Ramon Barea Cecilia [15%]; Débora Galdeano González [15%]; María Sánchez Marqués [15%] | 1.71h | 46.2 | 46.2 |
| 137 | 5.1.3.5 | Cue Sheet |  | 1.42h | 2018-12-24 09:00 | 2018-12-24 10:25 |  | 2018-12-24 09:00 | 2018-12-24 10:25 | 1.42h | 24.82d |  |  |  | David Ramón Sevilla [15%]; Jose Ramon Barea Cecilia [15%]; Débora Galdeano González [15%]; María Sánchez Marqués [15%] | 0.85h | 29.04 | 29.04 |
| 138 | 5.1.3.6 | Hoja de metadatos |  | 1.42h | 2018-12-24 09:00 | 2018-12-24 10:25 |  | 2018-12-24 09:00 | 2018-12-24 10:25 | 1.42h | 24.82d |  |  |  | David Ramón Sevilla [15%]; Jose Ramon Barea Cecilia [15%]; Débora Galdeano González [15%]; María Sánchez Marqués [15%] | 0.85h | 29.04 | 29.04 |
| 139 | 5.1.3.7 | Integración del motor de audio en el juego con prueba de concepto |  | 2.85h | 2018-12-24 09:00 | 2018-12-24 11:51 |  | 2018-12-24 09:00 | 2018-12-24 11:51 | 2.85h | 24.64d |  |  |  | David Ramón Sevilla [15%]; Jose Ramon Barea Cecilia [15%]; Débora Galdeano González [15%]; María Sánchez Marqués [15%] | 1.71h | 46.2 | 46.2 |
| 140 | 5.1.4 | <Tarea nueva> |  | 1d? | 2018-12-24 09:00 | 2018-12-24 19:00 |  | 2018-12-24 09:00 | 2018-12-24 19:00 | 1d? | 24d |  |  |  |  |  |  |  |
| 141 | 5.2 | **Iteracion 8** |  | 1.25d? | 2019-01-11 09:00 | 2019-01-14 11:00 |  | 2019-01-11 09:00 | 2019-01-14 11:00 | 1.25d? | 9.75d |  | start no earlier than 2019-01-11 09:00 |  |  | 10.25h | 289.08 | 289.08 |
| 142 | 5.2.1 | [V2]Diseño e implementación b.objetos (7/10) |  | 7h | 2019-01-11 09:00 | 2019-01-11 18:00 |  | 2019-01-11 09:00 | 2019-01-11 18:00 | 7h | 10.12d |  |  |  |  |  |  |  |
| 143 | 5.2.2 | [v2]Diseño e implementacion b.componentes 7 |  | 10h | 2019-01-11 09:00 | 2019-01-14 11:00 |  | 2019-01-11 09:00 | 2019-01-14 11:00 | 10h | 9.75d |  | start no earlier than 2018-12-24 09:00 |  |  |  |  |  |
| 144 | 5.2.3 | **[TDS]Realizar sonidos para el juego 7/7** |  | 0.36d | 2019-01-11 09:00 | 2019-01-11 11:51 |  | 2019-01-11 09:00 | 2019-01-11 11:51 | 0.36d | 10.64d |  |  |  |  | 10.25h | 289.08 | 289.08 |
| 145 | 5.2.3.1 | Síntesis |  | 2.85h | 2019-01-11 09:00 | 2019-01-11 11:51 |  | 2019-01-11 09:00 | 2019-01-11 11:51 | 2.85h | 10.64d |  |  |  | David Ramón Sevilla [15%]; Jose Ramon Barea Cecilia [15%]; Débora Galdeano González [15%]; María Sánchez Marqués [15%] | 1.71h | 46.2 | 46.2 |
| 146 | 5.2.3.2 | Grabaciones propias |  | 2.85h | 2019-01-11 09:00 | 2019-01-11 11:51 |  | 2019-01-11 09:00 | 2019-01-11 11:51 | 2.85h | 10.64d |  |  |  | David Ramón Sevilla [15%]; Jose Ramon Barea Cecilia [15%]; Débora Galdeano González [15%]; María Sánchez Marqués [15%] | 1.71h | 46.2 | 46.2 |
| 147 | 5.2.3.3 | Sonidos externos |  | 2.85h | 2019-01-11 09:00 | 2019-01-11 11:51 |  | 2019-01-11 09:00 | 2019-01-11 11:51 | 2.85h | 10.64d |  |  |  | David Ramón Sevilla [15%]; Jose Ramon Barea Cecilia [15%]; Débora Galdeano González [15%]; María Sánchez Marqués [15%] | 1.71h | 46.2 | 46.2 |
| 148 | 5.2.3.4 | Música |  | 2.85h | 2019-01-11 09:00 | 2019-01-11 11:51 |  | 2019-01-11 09:00 | 2019-01-11 11:51 | 2.85h | 10.64d |  |  |  | David Ramón Sevilla [15%]; Jose Ramon Barea Cecilia [15%]; Débora Galdeano González [15%]; María Sánchez Marqués [15%] | 1.71h | 46.2 | 46.2 |
| 149 | 5.2.3.5 | Cue Sheet |  | 1.42h | 2019-01-11 09:00 | 2019-01-11 10:25 |  | 2019-01-11 09:00 | 2019-01-11 10:25 | 1.42h | 10.82d |  |  |  | David Ramón Sevilla [15%]; Jose Ramon Barea Cecilia [15%]; Débora Galdeano González [15%]; María Sánchez Marqués [15%] | 0.85h | 29.04 | 29.04 |
| 150 | 5.2.3.6 | Hoja de metadatos |  | 1.42h | 2019-01-11 09:00 | 2019-01-11 10:25 |  | 2019-01-11 09:00 | 2019-01-11 10:25 | 1.42h | 10.82d |  |  |  | David Ramón Sevilla [15%]; Jose Ramon Barea Cecilia [15%]; Débora Galdeano González [15%]; María Sánchez Marqués [15%] | 0.85h | 29.04 | 29.04 |
| 151 | 5.2.3.7 | Integración del motor de audio en el juego con prueba de concepto |  | 2.85h | 2019-01-11 09:00 | 2019-01-11 11:51 |  | 2019-01-11 09:00 | 2019-01-11 11:51 | 2.85h | 10.64d |  |  |  | David Ramón Sevilla [15%]; Jose Ramon Barea Cecilia [15%]; Débora Galdeano González [15%]; María Sánchez Marqués [15%] | 1.71h | 46.2 | 46.2 |
| 152 | 5.2.4 | <Tarea nueva> |  | 1d? | 2019-01-11 09:00 | 2019-01-11 19:00 |  | 2019-01-11 09:00 | 2019-01-11 19:00 | 1d? | 10d |  |  |  |  |  |  |  |
| 153 | 5.3 | [PM]Revisar especificación proyecto |  | 1d | 2018-12-24 09:00 | 2018-12-24 19:00 |  | 2018-12-24 09:00 | 2018-12-24 19:00 | 1d | 24d |  | start no earlier than 2018-12-22 09:00 |  |  |  |  |  |
| 154 | 5.4 | [PM]Reestimar proyecto |  | 1d? | 2018-12-24 09:00 | 2018-12-24 19:00 |  | 2018-12-24 09:00 | 2018-12-24 19:00 | 1d? | 24d |  | start no earlier than 2018-12-22 09:00 |  |  |  |  |  |
| 155 | 5.5 | [PM]Detallar plan iteraciones del mes de Enero. Creación Subtareas y precedencias en Project |  | 1d? | 2018-12-24 09:00 | 2018-12-24 19:00 |  | 2018-12-24 09:00 | 2018-12-24 19:00 | 1d? | 24d |  | start no earlier than 2018-12-22 09:00 |  |  |  |  |  |
| 156 | 5.6 | [PM]Detallar plan iteraciones del mes de Enero. Asignar recursos a las tareas en Project |  | 1d? | 2018-12-24 09:00 | 2018-12-24 19:00 |  | 2018-12-24 09:00 | 2018-12-24 19:00 | 1d? | 24d |  | start no earlier than 2018-12-22 09:00 |  |  |  |  |  |
| 157 | 5.7 | [PM]Registrar tiempos y % de realización de tareas en Project |  | 1d? | 2018-12-24 09:00 | 2018-12-24 19:00 |  | 2018-12-24 09:00 | 2018-12-24 19:00 | 1d? | 24d |  | start no earlier than 2018-12-22 09:00 |  |  |  |  |  |
| 158 | 5.8 | [PM]Comparar la planificación prevista y real en Project hito 2 |  | 1d? | 2018-12-24 09:00 | 2018-12-24 19:00 |  | 2018-12-24 09:00 | 2018-12-24 19:00 | 1d? | 24d |  | start no earlier than 2018-12-22 09:00 |  |  |  |  |  |
| 159 | 5.9 | [PM]Confeccionar Informes de iteración e informe resumen de Hito 2 |  | 1d? | 2018-12-24 09:00 | 2018-12-24 19:00 |  | 2018-12-24 09:00 | 2018-12-24 19:00 | 1d? | 24d |  | start no earlier than 2018-12-22 09:00 |  |  |  |  |  |
| 160 | 5.10 | [V1]Sistema de depuración visual in-game de la IA |  | 1d | 2018-12-24 09:00 | 2018-12-24 19:00 |  | 2018-12-24 09:00 | 2018-12-24 19:00 | 1d | 24d |  | start no earlier than 2018-12-22 09:00 |  |  |  |  |  |
| 161 | 5.11 | [V1]Sistema de distribución central de tiempo de proceso (Scheduling) |  | 1d? | 2018-12-24 09:00 | 2018-12-24 19:00 |  | 2018-12-24 09:00 | 2018-12-24 19:00 | 1d? | 24d |  | start no earlier than 2018-12-22 09:00 |  |  |  |  |  |
| 162 | 5.12 | [V2]Power-ups y elementos adicionales |  | 1d | 2018-12-24 09:00 | 2018-12-24 19:00 |  | 2018-12-24 09:00 | 2018-12-24 19:00 | 1d | 24d |  | start no earlier than 2018-12-22 09:00 |  |  |  |  |  |
| 163 | 5.13 | [V2]Integración de librería para GUI |  | 1d | 2018-12-24 09:00 | 2018-12-24 19:00 |  | 2018-12-24 09:00 | 2018-12-24 19:00 | 1d | 24d |  | start no earlier than 2018-12-22 09:00 |  |  |  |  |  |
| 164 | 5.14 | [V2]Implementación de menús |  | 1d | 2018-12-24 09:00 | 2018-12-24 19:00 |  | 2018-12-24 09:00 | 2018-12-24 19:00 | 1d | 24d |  | start no earlier than 2018-12-22 09:00 |  |  |  |  |  |
| 165 | 5.15 | [V2]Implementación del HUD |  | 1d | 2018-12-24 09:00 | 2018-12-24 19:00 |  | 2018-12-24 09:00 | 2018-12-24 19:00 | 1d | 24d |  | start no earlier than 2018-12-22 09:00 |  |  |  |  |  |
| 166 | 5.16 | [PD]Trailer juego/proyecto |  | 1d | 2018-12-24 09:00 | 2018-12-24 19:00 |  | 2018-12-24 09:00 | 2018-12-24 19:00 | 1d | 24d |  | start no earlier than 2018-12-22 09:00 |  |  |  |  |  |
| 167 | 5.17 | [PD]Making of juego/proyecto |  | 1d | 2018-12-24 09:00 | 2018-12-24 19:00 |  | 2018-12-24 09:00 | 2018-12-24 19:00 | 1d | 24d |  | start no earlier than 2018-12-22 09:00 |  |  |  |  |  |
| 168 | 5.18 | [RV]Modelado de los personajes |  | 1d | 2018-12-24 09:00 | 2018-12-24 19:00 |  | 2018-12-24 09:00 | 2018-12-24 19:00 | 1d | 24d |  | start no earlier than 2018-12-22 09:00 |  |  |  |  |  |
| 169 | 5.19 | [RV]Texturizado de los personajes |  | 1d | 2018-12-24 09:00 | 2018-12-24 19:00 |  | 2018-12-24 09:00 | 2018-12-24 19:00 | 1d | 24d |  | start no earlier than 2018-12-22 09:00 |  |  |  |  |  |
| 170 | 5.20 | [RV]Modelado del entorno y elementos |  | 1d | 2018-12-24 09:00 | 2018-12-24 19:00 |  | 2018-12-24 09:00 | 2018-12-24 19:00 | 1d | 24d |  | start no earlier than 2018-12-22 09:00 |  |  |  |  |  |
| 171 | 6 | Version Beta del juego, que se pueda jugar | milestone | 0d | 2019-01-14 11:00 | 2019-01-14 11:00 | 128 | 2019-01-14 11:00 | 2019-01-14 11:00 | 0d | 80.75d |  | start no earlier than 2018-12-22 09:00 |  |  |  |  |  |

| ID | WBS | Task | Type | Duration | Start | Finish | Predecessors | Baseline start | Baseline finish | Baseline duration | Total slack | Free slack | Constraint |
| --- | --- | --- | --- | --- | --- | --- | --- | --- | --- | --- | --- | --- | --- |
| 172 | 7 | **Hito 3** |  | 30d? | 2019-01-24 09:00 | 2019-03-06 19:00 |  | 2019-01-24 09:00 | 2019-03-06 19:00 | 30d? | 14d | 0d | finish no later than 2019-03-26 19:00 |
| 173 | 7.1 | **Iteracion 9** |  | 1.25d? | 2019-01-25 09:00 | 2019-01-28 11:00 |  | 2019-01-25 09:00 | 2019-01-28 11:00 | 1.25d? | 41.75d |  | start no earlier than 2019-01-25 09:00 |
| 174 | 7.1.1 | [V2]Diseño e implementación b.objetos (8/10) |  | 7h | 2019-01-25 09:00 | 2019-01-25 18:00 |  | 2019-01-25 09:00 | 2019-01-25 18:00 | 7h | 42.12d |  |  |
| 175 | 7.1.2 | [v2]Diseño e implementacion b.componentes 8 |  | 10h | 2019-01-25 09:00 | 2019-01-28 11:00 |  | 2019-01-25 09:00 | 2019-01-28 11:00 | 10h | 41.75d |  | start no earlier than 2019-01-07 09:00 |
| 176 | 7.1.3 | <Tarea nueva> |  | 1d? | 2019-01-25 09:00 | 2019-01-25 19:00 |  | 2019-01-25 09:00 | 2019-01-25 19:00 | 1d? | 42d |  |  |
| 177 | 7.2 | **Iteracion 10** |  | 1.25d? | 2019-02-06 09:00 | 2019-02-07 11:00 |  | 2019-02-06 09:00 | 2019-02-07 11:00 | 1.25d? | 33.75d |  | start no earlier than 2019-02-06 09:00 |
| 178 | 7.2.1 | [V2]Diseño e implementación b.objetos (9/10) |  | 7h | 2019-02-06 09:00 | 2019-02-06 18:00 |  | 2019-02-06 09:00 | 2019-02-06 18:00 | 7h | 34.12d |  |  |
| 179 | 7.2.2 | [v2]Diseño e implementacion b.componentes 9 |  | 10h | 2019-02-06 09:00 | 2019-02-07 11:00 |  | 2019-02-06 09:00 | 2019-02-07 11:00 | 10h | 33.75d |  | start no earlier than 2019-01-21 09:00 |
| 180 | 7.2.3 | <Tarea nueva> |  | 1d? | 2019-02-06 09:00 | 2019-02-06 19:00 |  | 2019-02-06 09:00 | 2019-02-06 19:00 | 1d? | 34d |  |  |
| 181 | 7.3 | **Iteracion 11** |  | 1.25d? | 2019-02-20 09:00 | 2019-02-21 11:00 |  | 2019-02-20 09:00 | 2019-02-21 11:00 | 1.25d? | 23.75d |  | start no earlier than 2019-02-20 09:00 |
| 182 | 7.3.1 | [V2]Diseño e implementación b.objetos (final) |  | 7h | 2019-02-20 09:00 | 2019-02-20 18:00 |  | 2019-02-20 09:00 | 2019-02-20 18:00 | 7h | 24.12d |  |  |
| 183 | 7.3.2 | [v2]Diseño e implementacion b.componentes (final) |  | 10h | 2019-02-20 09:00 | 2019-02-21 11:00 |  | 2019-02-20 09:00 | 2019-02-21 11:00 | 10h | 23.75d |  | start no earlier than 2019-02-04 09:00 |
| 184 | 7.3.3 | <Tarea nueva> |  | 1d? | 2019-02-20 09:00 | 2019-02-20 19:00 |  | 2019-02-20 09:00 | 2019-02-20 19:00 | 1d? | 24d |  |  |
| 185 | 7.4 | **Iteracion 12** |  | 1d? | 2019-03-06 09:00 | 2019-03-06 19:00 |  | 2019-03-06 09:00 | 2019-03-06 19:00 | 1d? | 14d |  | start no earlier than 2019-03-06 09:00 |
| 186 | 7.4.1 | <Tarea nueva> |  | 1d? | 2019-03-06 09:00 | 2019-03-06 19:00 |  | 2019-03-06 09:00 | 2019-03-06 19:00 | 1d? | 14d |  |  |
| 187 | 7.5 | [PM]Detallar plan iteraciones del mes de Febrero-Marzo. Creación Subtareas y precedencias en Project |  | 1d | 2019-01-24 09:00 | 2019-01-24 19:00 |  | 2019-01-24 09:00 | 2019-01-24 19:00 | 1d | 43d |  | start no earlier than 2019-01-24 09:00 |
| 188 | 7.6 | [PM]Detallar plan iteraciones del mes de Febrero-Marzo Asignar recursos a las tareas en Project |  | 1d? | 2019-01-24 09:00 | 2019-01-24 19:00 |  | 2019-01-24 09:00 | 2019-01-24 19:00 | 1d? | 43d |  | start no earlier than 2019-01-24 09:00 |
| 189 | 7.7 | [PM]Registrar tiempos y % de realización de tareas en Project |  | 1d? | 2019-01-24 09:00 | 2019-01-24 19:00 |  | 2019-01-24 09:00 | 2019-01-24 19:00 | 1d? | 43d |  | start no earlier than 2019-01-24 09:00 |
| 190 | 7.8 | [PM]Comparar la planificación prevista y real en Project hito 3 |  | 1d? | 2019-01-24 09:00 | 2019-01-24 19:00 |  | 2019-01-24 09:00 | 2019-01-24 19:00 | 1d? | 43d |  | start no earlier than 2019-01-24 09:00 |
| 191 | 7.9 | [PM]Confeccionar Informes de iteración e informe resumen de Hito 3 |  | 1d? | 2019-01-24 09:00 | 2019-01-24 19:00 |  | 2019-01-24 09:00 | 2019-01-24 19:00 | 1d? | 43d |  | start no earlier than 2019-01-24 09:00 |
| 192 | 7.10 | [PM]Elaborar la presentación del Hito 3 |  | 1d? | 2019-01-24 09:00 | 2019-01-24 19:00 |  | 2019-01-24 09:00 | 2019-01-24 19:00 | 1d? | 43d |  | start no earlier than 2019-01-24 09:00 |
| 193 | 7.11 | [PM]Exponer la presentación del Hito 3 |  | 1d? | 2019-01-24 09:00 | 2019-01-24 19:00 |  | 2019-01-24 09:00 | 2019-01-24 19:00 | 1d? | 43d |  | start no earlier than 2019-01-24 09:00 |
| 194 | 7.12 | [TAG]Estructura básica del nodo (array de hijos, puntero a padre, puntero a entidad, funcionalidad básica -constructor, destructor, gets, sets, manejo de hijos….) |  | 1d? | 2019-01-24 09:00 | 2019-01-24 19:00 |  | 2019-01-24 09:00 | 2019-01-24 19:00 | 1d? | 43d |  | start no earlier than 2019-01-24 09:00 |
| 195 | 7.13 | [TAG]Recorrido-dibujado del árbol |  | 1d? | 2019-01-24 09:00 | 2019-01-24 19:00 |  | 2019-01-24 09:00 | 2019-01-24 19:00 | 1d? | 43d |  | start no earlier than 2019-01-24 09:00 |
| 196 | 7.14 | [TAG]Estructura básica de la entidad (Constructor, destructor, funciones… todas virtuales, vacías) |  | 1d | 2019-01-24 09:00 | 2019-01-24 19:00 |  | 2019-01-24 09:00 | 2019-01-24 19:00 | 1d | 43d |  | start no earlier than 2019-01-24 09:00 |
| 197 | 7.15 | [TAG]Matrices (model, view, projection) y pila estáticas y su manejo |  | 1d? | 2019-01-24 09:00 | 2019-01-24 19:00 |  | 2019-01-24 09:00 | 2019-01-24 19:00 | 1d? | 43d |  | start no earlier than 2019-01-24 09:00 |
| 198 | 7.16 | [TAG]Estructura básica de la transformación (Constructor, destructor, matriz transformación…) |  | 1d? | 2019-01-24 09:00 | 2019-01-24 19:00 |  | 2019-01-24 09:00 | 2019-01-24 19:00 | 1d? | 43d |  | start no earlier than 2019-01-24 09:00 |
| 199 | 7.17 | [TAG]Operaciones de transformación (trasladar, rotar, escalar, identidad, trasponer, invertir, todas con GLM o GLMatrix) |  | 1d? | 2019-01-24 09:00 | 2019-01-24 19:00 |  | 2019-01-24 09:00 | 2019-01-24 19:00 | 1d? | 43d |  | start no earlier than 2019-01-24 09:00 |
| 200 | 7.18 | [TAG]Dibujado (begindraw, enddraw, manejo pila y matriz model) |  | 1d? | 2019-01-24 09:00 | 2019-01-24 19:00 |  | 2019-01-24 09:00 | 2019-01-24 19:00 | 1d? | 43d |  | start no earlier than 2019-01-24 09:00 |
| 201 | 7.19 | [TAG]Estructura básica de la cámara (Constructor, destructor, matriz proyección) |  | 1d? | 2019-01-24 09:00 | 2019-01-24 19:00 |  | 2019-01-24 09:00 | 2019-01-24 19:00 | 1d? | 43d |  | start no earlier than 2019-01-24 09:00 |
| 202 | 7.20 | [TAG]Rellenar matriz perspectiva (con GLM o GLMatrix) |  | 1d | 2019-01-24 09:00 | 2019-01-24 19:00 |  | 2019-01-24 09:00 | 2019-01-24 19:00 | 1d | 43d |  | start no earlier than 2019-01-24 09:00 |
| 203 | 7.21 | [TAG]Estructura básica de la luz (Constructor, destructor) |  | 1d? | 2019-01-24 09:00 | 2019-01-24 19:00 |  | 2019-01-24 09:00 | 2019-01-24 19:00 | 1d? | 43d |  | start no earlier than 2019-01-24 09:00 |
| 204 | 7.22 | [TAG]Datos y funciones luz puntual |  | 1d? | 2019-01-24 09:00 | 2019-01-24 19:00 |  | 2019-01-24 09:00 | 2019-01-24 19:00 | 1d? | 43d |  | start no earlier than 2019-01-24 09:00 |
| 205 | 7.23 | [TAG]Estructura básica de la malla (Constructor, destructor) |  | 1d? | 2019-01-24 09:00 | 2019-01-24 19:00 |  | 2019-01-24 09:00 | 2019-01-24 19:00 | 1d? | 43d |  | start no earlier than 2019-01-24 09:00 |
| 206 | 7.24 | [TAG]Datos de mallas, texturas, materiales… (llamadas al gestor de recursos) |  | 1d? | 2019-01-24 09:00 | 2019-01-24 19:00 |  | 2019-01-24 09:00 | 2019-01-24 19:00 | 1d? | 43d |  | start no earlier than 2019-01-24 09:00 |
| 207 | 7.25 | [TAG]Dibujado de mallas (begindraw, enddraw, matriz model…) |  | 1d? | 2019-01-24 09:00 | 2019-01-24 19:00 |  | 2019-01-24 09:00 | 2019-01-24 19:00 | 1d? | 43d |  | start no earlier than 2019-01-24 09:00 |
| 208 | 7.26 | [TAG]Estructura básica del gestor de recursos (constructor, destructor, vectores de recursos) |  | 1d? | 2019-01-24 09:00 | 2019-01-24 19:00 |  | 2019-01-24 09:00 | 2019-01-24 19:00 | 1d? | 43d |  | start no earlier than 2019-01-24 09:00 |
| 209 | 7.27 | [TAG]Obtener recurso (gestión adecuada de memoria) |  | 1d? | 2019-01-24 09:00 | 2019-01-24 19:00 |  | 2019-01-24 09:00 | 2019-01-24 19:00 | 1d? | 43d |  | start no earlier than 2019-01-24 09:00 |
| 210 | 7.28 | [TAG]Estructura básica del recurso (constructor, destructor. Es virtual, vacío) |  | 1d? | 2019-01-24 09:00 | 2019-01-24 19:00 |  | 2019-01-24 09:00 | 2019-01-24 19:00 | 1d? | 43d |  | start no earlier than 2019-01-24 09:00 |
| 211 | 7.29 | [TAG]Estructura básica de la malla (constructor, destructor) |  | 1d? | 2019-01-24 09:00 | 2019-01-24 19:00 |  | 2019-01-24 09:00 | 2019-01-24 19:00 | 1d? | 43d |  | start no earlier than 2019-01-24 09:00 |
| 212 | 7.30 | [TAG]Lectura de disco (con assimp) |  | 1d? | 2019-01-24 09:00 | 2019-01-24 19:00 |  | 2019-01-24 09:00 | 2019-01-24 19:00 | 1d? | 43d |  | start no earlier than 2019-01-24 09:00 |
| 213 | 7.31 | [TAG]Creación de buffers de vértices, normales, índices… y relleno |  | 1d? | 2019-01-24 09:00 | 2019-01-24 19:00 |  | 2019-01-24 09:00 | 2019-01-24 19:00 | 1d? | 43d |  | start no earlier than 2019-01-24 09:00 |
| 214 | 7.32 | [TAG]Dibujado de las mallas (draw, con paso de los buffers a OpenGL o WebGL) |  | 1d? | 2019-01-24 09:00 | 2019-01-24 19:00 |  | 2019-01-24 09:00 | 2019-01-24 19:00 | 1d? | 43d |  | start no earlier than 2019-01-24 09:00 |
| 215 | 7.33 | [TAG]Estructura básica del material (constructor, destructor) |  | 1d? | 2019-01-24 09:00 | 2019-01-24 19:00 |  | 2019-01-24 09:00 | 2019-01-24 19:00 | 1d? | 43d |  | start no earlier than 2019-01-24 09:00 |
| 216 | 7.34 | [TAG]Leer material de disco (con librería o con parser propio) y rellenar valores |  | 1d? | 2019-01-24 09:00 | 2019-01-24 19:00 |  | 2019-01-24 09:00 | 2019-01-24 19:00 | 1d? | 43d |  | start no earlier than 2019-01-24 09:00 |
| 217 | 7.35 | [TAG]Dibujado de los materiales (preparar los materiales y cargarlos en OpenGL o WebGL) |  | 1d? | 2019-01-24 09:00 | 2019-01-24 19:00 |  | 2019-01-24 09:00 | 2019-01-24 19:00 | 1d? | 43d |  | start no earlier than 2019-01-24 09:00 |
| 218 | 7.36 | [TAG]Estructura básica del shader (constructor, destructor) |  | 1d? | 2019-01-24 09:00 | 2019-01-24 19:00 |  | 2019-01-24 09:00 | 2019-01-24 19:00 | 1d? | 43d |  | start no earlier than 2019-01-24 09:00 |
| 219 | 7.37 | [TAG]Lectura de shaders de disco (con parser propio) y guardarlo |  | 1d? | 2019-01-24 09:00 | 2019-01-24 19:00 |  | 2019-01-24 09:00 | 2019-01-24 19:00 | 1d? | 43d |  | start no earlier than 2019-01-24 09:00 |
| 220 | 7.38 | [TAG]Estructura básica de la interfaz (constructor, destructor, inicialización motor y openGL) |  | 1d? | 2019-01-24 09:00 | 2019-01-24 19:00 |  | 2019-01-24 09:00 | 2019-01-24 19:00 | 1d? | 43d |  | start no earlier than 2019-01-24 09:00 |
| 221 | 7.39 | [TAG]Funciones para crear cámaras y gestionarlas (manejo de las cámaras, registro, cálculo de la matriz view) |  | 1d? | 2019-01-24 09:00 | 2019-01-24 19:00 |  | 2019-01-24 09:00 | 2019-01-24 19:00 | 1d? | 43d |  | start no earlier than 2019-01-24 09:00 |
| 222 | 7.40 | [TAG]Funciones para crear luces y gestionarlas (manejo de las luces registro, cálculo de la matriz light) |  | 1d? | 2019-01-24 09:00 | 2019-01-24 19:00 |  | 2019-01-24 09:00 | 2019-01-24 19:00 | 1d? | 43d |  | start no earlier than 2019-01-24 09:00 |
| 223 | 7.41 | [TAG]Funciones para crear transformaciones (creación de varios nodos con las transformaciones, manejo de las transformaciones) |  | 1d? | 2019-01-24 09:00 | 2019-01-24 19:00 |  | 2019-01-24 09:00 | 2019-01-24 19:00 | 1d? | 43d |  | start no earlier than 2019-01-24 09:00 |
| 224 | 7.42 | [TAG]Funciones para crear mallas y animaciones |  | 1d? | 2019-01-24 09:00 | 2019-01-24 19:00 |  | 2019-01-24 09:00 | 2019-01-24 19:00 | 1d? | 43d |  | start no earlier than 2019-01-24 09:00 |
| 225 | 7.43 | [TAG]Funciones para crear shaders y gestionarlos |  | 1d? | 2019-01-24 09:00 | 2019-01-24 19:00 |  | 2019-01-24 09:00 | 2019-01-24 19:00 | 1d? | 43d |  | start no earlier than 2019-01-24 09:00 |
| 226 | 7.44 | [TAG]Shader básico (Sombreado de Phong, reflexión de Phong) con materiales |  | 1d? | 2019-01-24 09:00 | 2019-01-24 19:00 |  | 2019-01-24 09:00 | 2019-01-24 19:00 | 1d? | 43d |  | start no earlier than 2019-01-24 09:00 |
| 227 | 7.45 | [TAG]Integración con la aplicación |  | 1d? | 2019-01-24 09:00 | 2019-01-24 19:00 |  | 2019-01-24 09:00 | 2019-01-24 19:00 | 1d? | 43d |  | start no earlier than 2019-01-24 09:00 |
| 228 | 7.46 | [TAG]Realización de una fachada entre el motor y la aplicación o videojuego |  | 1d? | 2019-01-24 09:00 | 2019-01-24 19:00 |  | 2019-01-24 09:00 | 2019-01-24 19:00 | 1d? | 43d |  | start no earlier than 2019-01-24 09:00 |
| 229 | 7.47 | [TAG]Librería matemática (GLM o GLMatrix) |  | 1d? | 2019-01-24 09:00 | 2019-01-24 19:00 |  | 2019-01-24 09:00 | 2019-01-24 19:00 | 1d? | 43d |  | start no earlier than 2019-01-24 09:00 |
| 230 | 7.48 | [TAG][Solo CED] Librería de lectura de mallas (assimp…) |  | 1d? | 2019-01-24 09:00 | 2019-01-24 19:00 |  | 2019-01-24 09:00 | 2019-01-24 19:00 | 1d? | 43d |  | start no earlier than 2019-01-24 09:00 |
| 231 | 7.49 | [TAG][Solo CED] Librería de ventanas, entrada/salida... (GLFW…) |  | 1d? | 2019-01-24 09:00 | 2019-01-24 19:00 |  | 2019-01-24 09:00 | 2019-01-24 19:00 | 1d? | 43d |  | start no earlier than 2019-01-24 09:00 |
| 232 | 7.50 | [V1]Flocking: comportamiento grupal emergente |  | 1d | 2019-01-24 09:00 | 2019-01-24 19:00 |  | 2019-01-24 09:00 | 2019-01-24 19:00 | 1d | 43d |  | start no earlier than 2019-01-24 09:00 |
| 233 | 7.51 | [V1]Editor in-game de parámetros y comportamientos de la IA |  | 1d | 2019-01-24 09:00 | 2019-01-24 19:00 |  | 2019-01-24 09:00 | 2019-01-24 19:00 | 1d | 43d |  | start no earlier than 2019-01-24 09:00 |
| 234 | 7.52 | [V1]Sistema de logros y puntuaciones web |  | 1d | 2019-01-24 09:00 | 2019-01-24 19:00 |  | 2019-01-24 09:00 | 2019-01-24 19:00 | 1d | 43d |  | start no earlier than 2019-01-24 09:00 |
| 235 | 7.53 | [V2]Implementación de cesped y vegetación |  | 1d | 2019-01-24 09:00 | 2019-01-24 19:00 |  | 2019-01-24 09:00 | 2019-01-24 19:00 | 1d | 43d |  | start no earlier than 2019-01-24 09:00 |
| 236 | 7.54 | [V2]Implementación de nubes |  | 1d | 2019-01-24 09:00 | 2019-01-24 19:00 |  | 2019-01-24 09:00 | 2019-01-24 19:00 | 1d | 43d |  | start no earlier than 2019-01-24 09:00 |
| 237 | 7.55 | [V2]Implementación de sistemas de partículas |  | 1d | 2019-01-24 09:00 | 2019-01-24 19:00 |  | 2019-01-24 09:00 | 2019-01-24 19:00 | 1d | 43d |  | start no earlier than 2019-01-24 09:00 |
| 238 | 7.56 | [TDS]Resto de la biblioteca (máx. 1/3), cuesheet y metadatos finales |  | 1d | 2019-01-24 09:00 | 2019-01-24 19:00 |  | 2019-01-24 09:00 | 2019-01-24 19:00 | 1d | 43d |  | start no earlier than 2019-01-24 09:00 |
| 239 | 7.57 | <Tarea nueva> |  | 1d? | 2019-01-24 09:00 | 2019-01-24 19:00 |  | 2019-01-24 09:00 | 2019-01-24 19:00 | 1d? | 43d |  | start no earlier than 2019-01-24 09:00 |
| 240 | 8 | Versión Producción - Lista para pulir | milestone | 0d | 2019-03-06 19:00 | 2019-03-06 19:00 | 172 | 2019-03-06 19:00 | 2019-03-06 19:00 | 0d | 43d |  | start no earlier than 2019-03-06 09:00 |

| ID | WBS | Task | Type | Duration | Start | Finish | Predecessors | Baseline start | Baseline finish | Baseline duration | Total slack | Constraint |
| --- | --- | --- | --- | --- | --- | --- | --- | --- | --- | --- | --- | --- |
| 241 | 9 | **hito 4** |  | 29d? | 2019-03-27 09:00 | 2019-05-06 19:00 |  | 2019-03-27 09:00 | 2019-05-06 19:00 | 29d? | 0d | finish no later than 2019-05-23 19:00 |
| 242 | 9.1 | **Iteracion 13** |  | 1d? | 2019-03-27 09:00 | 2019-03-27 19:00 |  | 2019-03-27 09:00 | 2019-03-27 19:00 | 1d? | 28d | start no earlier than 2019-03-27 09:00 |
| 243 | 9.1.1 | <Tarea nueva> |  | 1d? | 2019-03-27 09:00 | 2019-03-27 19:00 |  | 2019-03-27 09:00 | 2019-03-27 19:00 | 1d? | 28d |  |
| 244 | 9.2 | **Semana santa** |  | 1d? | 2019-04-17 09:00 | 2019-04-17 19:00 |  | 2019-04-17 09:00 | 2019-04-17 19:00 | 1d? | 13d | start no earlier than 2019-04-17 09:00 |
| 245 | 9.2.1 | <Tarea nueva> |  | 1d? | 2019-04-17 09:00 | 2019-04-17 19:00 |  | 2019-04-17 09:00 | 2019-04-17 19:00 | 1d? | 13d |  |
| 246 | 9.3 | **Iteracion 14** |  | 1d? | 2019-05-06 09:00 | 2019-05-06 19:00 |  | 2019-05-06 09:00 | 2019-05-06 19:00 | 1d? | 0d | start no earlier than 2019-05-05 09:00 |
| 247 | 9.3.1 | <Tarea nueva> |  | 1d? | 2019-05-06 09:00 | 2019-05-06 19:00 |  | 2019-05-06 09:00 | 2019-05-06 19:00 | 1d? | 0d |  |
| 248 | 9.4 | [PM]Detallar plan iteraciones del mes de Abril-Mayo. Creación Subtareas y precedencias en Project |  | 1d | 2019-03-27 09:00 | 2019-03-27 19:00 |  | 2019-03-27 09:00 | 2019-03-27 19:00 | 1d | 28d | start no earlier than 2019-03-27 09:00 |
| 249 | 9.5 | [PM]Detallar plan iteraciones del mes de Abril-Mayo. Asignar recursos a las tareas en Project |  | 1d? | 2019-03-27 09:00 | 2019-03-27 19:00 |  | 2019-03-27 09:00 | 2019-03-27 19:00 | 1d? | 28d | start no earlier than 2019-03-27 09:00 |
| 250 | 9.6 | [PM]Registrar tiempos y % de realización de tareas en Project |  | 1d? | 2019-03-27 09:00 | 2019-03-27 19:00 |  | 2019-03-27 09:00 | 2019-03-27 19:00 | 1d? | 28d | start no earlier than 2019-03-27 09:00 |
| 251 | 9.7 | [PM]Comparar la planificación prevista y real en Project hito 4 |  | 1d? | 2019-03-27 09:00 | 2019-03-27 19:00 |  | 2019-03-27 09:00 | 2019-03-27 19:00 | 1d? | 28d | start no earlier than 2019-03-27 09:00 |
| 252 | 9.8 | [PM]Confeccionar Informes de iteración e informe resumen de Hito 4 |  | 1d? | 2019-03-27 09:00 | 2019-03-27 19:00 |  | 2019-03-27 09:00 | 2019-03-27 19:00 | 1d? | 28d | start no earlier than 2019-03-27 09:00 |
| 253 | 9.9 | [PM]Elaborar la presentación del Hito 4 |  | 1d? | 2019-03-27 09:00 | 2019-03-27 19:00 |  | 2019-03-27 09:00 | 2019-03-27 19:00 | 1d? | 28d | start no earlier than 2019-03-27 09:00 |
| 254 | 9.10 | [PM]Exponer la presentación del Hito 4 |  | 1d? | 2019-03-27 09:00 | 2019-03-27 19:00 |  | 2019-03-27 09:00 | 2019-03-27 19:00 | 1d? | 28d | start no earlier than 2019-03-27 09:00 |
| 255 | 9.11 | [TAG]Estructura básica de la animación (Constructor, destructor) |  | 1d | 2019-03-27 09:00 | 2019-03-27 19:00 |  | 2019-03-27 09:00 | 2019-03-27 19:00 | 1d | 28d | start no earlier than 2019-03-27 09:00 |
| 256 | 9.12 | [TAG]Datos de animaciones, mallas, texturas, materiales (multiples, con llamadas al gestor de recursos) |  | 1d? | 2019-03-27 09:00 | 2019-03-27 19:00 |  | 2019-03-27 09:00 | 2019-03-27 19:00 | 1d? | 28d | start no earlier than 2019-03-27 09:00 |
| 257 | 9.13 | [TAG]Dibujado de texturas (preparar las texturas y cargarlas en OpenGL o WebGL) |  | 1d? | 2019-03-27 09:00 | 2019-03-27 19:00 |  | 2019-03-27 09:00 | 2019-03-27 19:00 | 1d? | 28d | start no earlier than 2019-03-27 09:00 |
| 258 | 9.14 | [TAG]Shader básico (Sombreado de Phong, reflexión de Phong) con materiales y texturas |  | 1d? | 2019-03-27 09:00 | 2019-03-27 19:00 |  | 2019-03-27 09:00 | 2019-03-27 19:00 | 1d? | 28d | start no earlier than 2019-03-27 09:00 |
| 259 | 9.15 | [TAG]Shader Cartoon |  | 1d? | 2019-03-27 09:00 | 2019-03-27 19:00 |  | 2019-03-27 09:00 | 2019-03-27 19:00 | 1d? | 28d | start no earlier than 2019-03-27 09:00 |
| 260 | 9.16 | [TAG]Bounding boxes (incluye retocar nodos, entidades y recursos malla) |  | 1d? | 2019-03-27 09:00 | 2019-03-27 19:00 |  | 2019-03-27 09:00 | 2019-03-27 19:00 | 1d? | 28d | start no earlier than 2019-03-27 09:00 |
| 261 | 9.17 | [TAG]Backface culling |  | 1d? | 2019-03-27 09:00 | 2019-03-27 19:00 |  | 2019-03-27 09:00 | 2019-03-27 19:00 | 1d? | 28d | start no earlier than 2019-03-27 09:00 |
| 262 | 9.18 | [TAG]Frustum culling |  | 1d? | 2019-03-27 09:00 | 2019-03-27 19:00 |  | 2019-03-27 09:00 | 2019-03-27 19:00 | 1d? | 28d | start no earlier than 2019-03-27 09:00 |
| 263 | 9.19 | [TAG]Sombras proyectadas |  | 1d? | 2019-03-27 09:00 | 2019-03-27 19:00 |  | 2019-03-27 09:00 | 2019-03-27 19:00 | 1d? | 28d | start no earlier than 2019-03-27 09:00 |
| 264 | 9.20 | [TAG]Sistema de partículas (sólo la incorporación en el motor) |  | 1d? | 2019-03-27 09:00 | 2019-03-27 19:00 |  | 2019-03-27 09:00 | 2019-03-27 19:00 | 1d? | 28d | start no earlier than 2019-03-27 09:00 |
| 265 | 9.21 | [PD]Créditos |  | 1d | 2019-03-27 09:00 | 2019-03-27 19:00 |  | 2019-03-27 09:00 | 2019-03-27 19:00 | 1d | 28d | start no earlier than 2019-03-27 09:00 |
| 266 | 9.22 | [PD]Vídeo final juego / explicación parte del proyecto |  | 1d | 2019-03-27 09:00 | 2019-03-27 19:00 |  | 2019-03-27 09:00 | 2019-03-27 19:00 | 1d | 28d | start no earlier than 2019-03-27 09:00 |
| 267 | 9.23 | [TDS]Integración de sonido y música en el juego |  | 1d | 2019-03-27 09:00 | 2019-03-27 19:00 |  | 2019-03-27 09:00 | 2019-03-27 19:00 | 1d | 28d | start no earlier than 2019-03-27 09:00 |
| 268 | 9.24 | [TDS]Post producción (mezcla y masterización in-game) |  | 1d | 2019-03-27 09:00 | 2019-03-27 19:00 |  | 2019-03-27 09:00 | 2019-03-27 19:00 | 1d | 28d | start no earlier than 2019-03-27 09:00 |
| 269 | 9.25 | [TDS]Sonido generado proceduralmente in-game |  | 1d | 2019-03-27 09:00 | 2019-03-27 19:00 |  | 2019-03-27 09:00 | 2019-03-27 19:00 | 1d | 28d | start no earlier than 2019-03-27 09:00 |
| 270 | 9.26 | [RV]Rigging de los personajes |  | 1d | 2019-03-27 09:00 | 2019-03-27 19:00 |  | 2019-03-27 09:00 | 2019-03-27 19:00 | 1d | 28d | start no earlier than 2019-03-27 09:00 |
| 271 | 9.27 | [RV]Captura de movimiento |  | 1d | 2019-03-27 09:00 | 2019-03-27 19:00 |  | 2019-03-27 09:00 | 2019-03-27 19:00 | 1d | 28d | start no earlier than 2019-03-27 09:00 |
| 272 | 9.28 | [RV]Animación de los personajes |  | 1d | 2019-03-27 09:00 | 2019-03-27 19:00 |  | 2019-03-27 09:00 | 2019-03-27 19:00 | 1d | 28d | start no earlier than 2019-03-27 09:00 |
| 273 | 9.29 | [RV]Texturizado del entorno y elementos |  | 1d | 2019-03-27 09:00 | 2019-03-27 19:00 |  | 2019-03-27 09:00 | 2019-03-27 19:00 | 1d | 28d | start no earlier than 2019-03-27 09:00 |
| 274 | 10 | Version terminada | milestone | 0d | 2019-05-06 19:00 | 2019-05-06 19:00 | 241 | 2019-05-06 19:00 | 2019-05-06 19:00 | 0d | 0d | start no earlier than 2018-10-24 09:00 |
